# iPad10.9Development

How a schedule from MS Project changed from version to version. A marks actual dates.

## Version 1 (saved 2023-07-15)

Note of the change: Receive Assignment 2 Work from Partner

| ID | WBS | Task | Duration | Start | Finish | Total float |
| --- | --- | --- | --- | --- | --- | --- |
| 1 | 1 | **Develop iPad 10.9 by Eric Hanoun and Kyle Galway** | 1d | 2023-07-07 | 2023-07-07 | 0d |
| 2 | 1.1 | **Initiation Phase** | 0d | 2023-07-07 | 2023-07-07 | 0d |
| 3 |  | Develop Project charter | 1d? | 2023-07-07 | 2023-07-07 |  |
| 4 |  | Identify Stakeholders | 1d? | 2023-07-07 | 2023-07-07 |  |
| 5 |  | Hold Kick-off Meeting | 1d? | 2023-07-07 | 2023-07-07 |  |
| 6 |  | Initiation Phase Complete Milestone | 0d | 2023-07-07 | 2023-07-07 |  |
| 7 | 1.2 | **Planning Phase** | 1d | 2023-07-07 | 2023-07-07 | 0d |
| 8 |  | Develop Project Management Plan | 1d? | 2023-07-07 | 2023-07-07 |  |
| 9 | 1.2.2 | **Plan Scope Management** | 1d | 2023-07-07 | 2023-07-07 | 0d |
| 10 |  | Collect Requirements | 1d | 2023-07-07 | 2023-07-07 | 0d |
| 11 |  | Define Project Scope | 1d? | 2023-07-07 | 2023-07-07 |  |
| 12 |  | Create Work Breakdown Structure | 1d | 2023-07-07 | 2023-07-07 | 0d |
| 13 |  | Project Scope Management Plan Defined | 0d | 2023-07-07 | 2023-07-07 |  |
| 14 | 1.2.3 | **Plan Schedule Management** | 1d | 2023-07-07 | 2023-07-07 | 0d |
| 15 |  | Define Activites | 1d? | 2023-07-07 | 2023-07-07 |  |
| 16 |  | Sequence Activities | 1d? | 2023-07-07 | 2023-07-07 |  |
| 17 |  | Estimate Activity Durations | 1d | 2023-07-07 | 2023-07-07 | 0d |
| 18 |  | Develop Schedule | 1d? | 2023-07-07 | 2023-07-07 |  |
| 19 |  | Project Schedule Management Plan Defined | 0d | 2023-07-07 | 2023-07-07 |  |
| 20 | 1.2.4 | **Plan Cost Management** | 0d | 2023-07-07 | 2023-07-07 | 0d |
| 21 |  | Estimate Costs | 1d? | 2023-07-07 | 2023-07-07 |  |
| 22 |  | Determine Project Budget | 1d? | 2023-07-07 | 2023-07-07 |  |
| 23 |  | Project Cost Management Plan Defined | 0d | 2023-07-07 | 2023-07-07 |  |
| 24 | 1.2.5 | **Plan Quality Management** | 0d | 2023-07-07 | 2023-07-07 | 0d |
| 25 |  | Project Quality Planning Complete Milestone | 0d | 2023-07-07 | 2023-07-07 |  |
| 26 | 1.2.6 | **Plan Resource Management** | 0d | 2023-07-07 | 2023-07-07 | 0d |
| 27 |  | Estimate Activity Resources | 1d? | 2023-07-07 | 2023-07-07 |  |
| 28 |  | Project Resource Planning Complete Milestone | 0d | 2023-07-07 | 2023-07-07 |  |
| 29 | 1.2.7 | **Plan Communications Management** | 0d | 2023-07-07 | 2023-07-07 | 0d |
| 30 |  | Project Communications Planning Complete Milestone | 0d | 2023-07-07 | 2023-07-07 |  |
| 31 | 1.2.8 | **Plan Risk Management** | 0d | 2023-07-07 | 2023-07-07 | 0d |
| 32 |  | Identify Risks | 1d? | 2023-07-07 | 2023-07-07 |  |
| 33 |  | Perform Qualitative Risk Analysis | 1d? | 2023-07-07 | 2023-07-07 |  |
| 34 |  | Perform Quantitative Risk Analysis | 1d? | 2023-07-07 | 2023-07-07 |  |
| 35 |  | Plan Risk Responses | 1d? | 2023-07-07 | 2023-07-07 |  |
| 36 |  | Project Risk Planning Complete Milestone | 0d | 2023-07-07 | 2023-07-07 |  |
| 37 |  | Planning Phase Complete Milestone | 0d | 2023-07-07 | 2023-07-07 |  |
| 38 | 1.3 | **Executing Phase** | 0d | 2023-07-07 | 2023-07-07 | 0d |
| 39 | 1.3.1 | **Project Integration Management** | 0d | 2023-07-07 | 2023-07-07 | 1d |
| 40 |  | Direct and Manage Project Work | 1d? | 2023-07-07 | 2023-07-07 |  |
| 41 |  | Manage Project Knowledge | 1d? | 2023-07-07 | 2023-07-07 |  |
| 42 | 1.3.2 | **Create Proposal** | 0d | 2023-07-07 | 2023-07-07 | 0d |
| 43 |  | Conduct Market Research | 1d? | 2023-07-07 | 2023-07-07 |  |
| 44 |  | Consult with Company Stakeholders | 1d? | 2023-07-07 | 2023-07-07 |  |
| 45 |  | Develop Project Proposal | 1d? | 2023-07-07 | 2023-07-07 |  |
| 46 |  | Proposal Creation Approved Milestone | 0d | 2023-07-07 | 2023-07-07 |  |
| 47 | 1.3.3 | **Obtain Approval** | 0d | 2023-07-07 | 2023-07-07 | 0d |
| 48 |  | Discuss with Company Stakeholders | 1d? | 2023-07-07 | 2023-07-07 |  |
| 49 |  | Review by Lead Designer | 1d? | 2023-07-07 | 2023-07-07 |  |
| 50 |  | Review by Hardware Designer | 1d? | 2023-07-07 | 2023-07-07 |  |
| 51 |  | Review by Hardware Designer | 1d? | 2023-07-07 | 2023-07-07 |  |
| 52 |  | Review by Software Designer | 1d? | 2023-07-07 | 2023-07-07 |  |
| 53 |  | Project Approval Obtained Milestone | 0d | 2023-07-07 | 2023-07-07 |  |
| 54 | 1.3.4 | **Tablet Design** | 0d | 2023-07-07 | 2023-07-07 | 0d |
| 55 | 1.3.4.1 | **Hardware Design** | 0d | 2023-07-07 | 2023-07-07 | 0d |
| 56 | 1.3.4.1.1 | **Screen Design** | 0d | 2023-07-07 | 2023-07-07 | 1d |
| 57 |  | Create Screen Prototype | 1d? | 2023-07-07 | 2023-07-07 |  |
| 58 |  | Test Screen Prototype | 1d? | 2023-07-07 | 2023-07-07 |  |
| 59 | 1.3.4.1.2 | **Wifi 6 Design** | 0d | 2023-07-07 | 2023-07-07 | 1d |
| 60 |  | Create Wi-fi 6 Adapter Prototype | 1d? | 2023-07-07 | 2023-07-07 |  |
| 61 |  | Test Wi-fi Adapter Prototype | 1d? | 2023-07-07 | 2023-07-07 |  |
| 62 | 1.3.4.1.3 | **Touch ID Design** | 0d | 2023-07-07 | 2023-07-07 | 1d |
| 63 |  | Create Touch ID Scanner Prototype | 1d? | 2023-07-07 | 2023-07-07 |  |
| 64 |  | Test Touch ID Scanner Prototype | 1d? | 2023-07-07 | 2023-07-07 |  |
| 65 | 1.3.4.1.4 | **Apple Pencil Design** | 0d | 2023-07-07 | 2023-07-07 | 1d |
| 66 |  | Create Apple Pencil Prototype | 1d? | 2023-07-07 | 2023-07-07 |  |
| 67 |  | Test Apple Pencil Prototype | 1d? | 2023-07-07 | 2023-07-07 |  |
| 68 | 1.3.4.1.5 | **Magic Keyboard Folio Design** | 0d | 2023-07-07 | 2023-07-07 | 1d |
| 69 |  | Create Magic Keyboard Folio and Trackpad Prototype | 1d? | 2023-07-07 | 2023-07-07 |  |
| 70 |  | Test Magic Keyboard Folio and Trackpad Prototype | 1d? | 2023-07-07 | 2023-07-07 |  |

| ID | WBS | Task | Duration | Start | Finish | Total float |
| --- | --- | --- | --- | --- | --- | --- |
| 71 | 1.3.4.1.6 | **Performance Benchmarking Design** | 0d | 2023-07-07 | 2023-07-07 | 1d |
| 72 |  | Develop A14 Bionic Chip Processor Prototype | 1d? | 2023-07-07 | 2023-07-07 |  |
| 73 |  | Benchmark Processor Prototype | 1d? | 2023-07-07 | 2023-07-07 |  |
| 74 |  | Hardware Design Complete Milestone | 0d | 2023-07-07 | 2023-07-07 |  |
| 75 | 1.3.4.2 | **Software Design** | 0d | 2023-07-07 | 2023-07-07 | 0d |
| 76 | 1.3.4.2.1 | **Develop iPadOS** | 0d | 2023-07-07 | 2023-07-07 | 1d |
| 77 |  | Create UI/UX for Operating System GUI | 1d? | 2023-07-07 | 2023-07-07 |  |
| 78 |  | Program OS | 1d? | 2023-07-07 | 2023-07-07 |  |
| 79 |  | Benchmark OS Performance | 1d? | 2023-07-07 | 2023-07-07 |  |
| 80 | 1.3.4.2.2 | **Design Canvas APP** | 0d | 2023-07-07 | 2023-07-07 | 1d |
| 81 |  | Design UI/UX for Canvas | 1d? | 2023-07-07 | 2023-07-07 |  |
| 82 |  | Program Canvas App | 1d? | 2023-07-07 | 2023-07-07 |  |
| 83 |  | Test Canvas App | 1d? | 2023-07-07 | 2023-07-07 |  |
| 84 | 1.3.4.2.3 | **Design App Store** | 0d | 2023-07-07 | 2023-07-07 | 1d |
| 85 |  | Design UI/UX for App Store | 1d? | 2023-07-07 | 2023-07-07 |  |
| 86 |  | Program App Store | 1d? | 2023-07-07 | 2023-07-07 |  |
| 87 |  | Test Compatibility with App Store | 1d? | 2023-07-07 | 2023-07-07 |  |
| 88 |  | Software Design Completed Milestone | 0d | 2023-07-07 | 2023-07-07 |  |
| 89 |  | Tablet Design Complete Milestone | 0d | 2023-07-07 | 2023-07-07 |  |
| 90 | 1.3.5 | **Manufacturing Tablet** | 0d | 2023-07-07 | 2023-07-07 | 0d |
| 91 |  | Send Plans to Manufacturing Team | 1d? | 2023-07-07 | 2023-07-07 |  |
| 92 |  | Manufacture Screen | 1d? | 2023-07-07 | 2023-07-07 |  |
| 93 |  | Manufacture Magic Keyboard Folio and Trackpad | 1d? | 2023-07-07 | 2023-07-07 |  |
| 94 |  | Manufacture Wi-fi 6 Adapter | 1d? | 2023-07-07 | 2023-07-07 |  |
| 95 |  | Manufacture Touch ID Scanner | 1d? | 2023-07-07 | 2023-07-07 |  |
| 96 |  | Manufacture Apple Pencil | 1d? | 2023-07-07 | 2023-07-07 |  |
| 97 |  | Parts Manufacturing Complete Milestone | 0d | 2023-07-07 | 2023-07-07 |  |
| 98 |  | Assemble Tablet from Components | 1d? | 2023-07-07 | 2023-07-07 |  |
| 99 |  | Manufacturing Complete Milestone | 0d | 2023-07-07 | 2023-07-07 |  |
| 100 |  | Executing Phase Complete Milestone | 0d | 2023-07-07 | 2023-07-07 |  |
| 101 | 1.4 | **Monitoring and Controlling Phase** | 0d | 2023-07-07 | 2023-07-07 | 0d |
| 102 |  | Monitor and Control Project Work | 1d? | 2023-07-07 | 2023-07-07 |  |
| 103 |  | Perform integrated Change Control | 1d? | 2023-07-07 | 2023-07-07 |  |
| 104 |  | Validate Scope | 1d? | 2023-07-07 | 2023-07-07 |  |
| 105 |  | Control Scope | 1d? | 2023-07-07 | 2023-07-07 |  |
| 106 |  | Control Schedule | 1d? | 2023-07-07 | 2023-07-07 |  |
| 107 |  | Control Costs | 1d? | 2023-07-07 | 2023-07-07 |  |
| 108 |  | Control Quality | 1d? | 2023-07-07 | 2023-07-07 |  |
| 109 |  | Control Resources | 1d? | 2023-07-07 | 2023-07-07 |  |
| 110 |  | Monitor Communications | 1d? | 2023-07-07 | 2023-07-07 |  |
| 111 |  | Monitor Risks | 1d? | 2023-07-07 | 2023-07-07 |  |
| 112 |  | Control Procurements | 1d? | 2023-07-07 | 2023-07-07 |  |
| 113 |  | monitor Stakeholder Engagement | 1d? | 2023-07-07 | 2023-07-07 |  |
| 114 |  | Monitoring and Controlling Complete Milestone | 0d | 2023-07-07 | 2023-07-07 |  |
| 115 | 1.5 | **Closing** | 0d | 2023-07-07 | 2023-07-07 | 0d |
| 116 |  | Close Project or Phase | 1d? | 2023-07-07 | 2023-07-07 |  |
| 117 |  | Project Complete Milestone | 0d | 2023-07-07 | 2023-07-07 |  |

## Version 2 (saved 2023-07-15)

Note of the change: Complete initial dependency and relationships between tasks in assignment 2.

Last finish 2023-07-07 → 2023-07-24 (+17d).

Added:

| ID | Task | Duration | Start | Finish | Predecessors |
| --- | --- | --- | --- | --- | --- |
| 10 | Plan Scope Management | 1d? | 2023-07-07 | 2023-07-07 |  |
| 15 | Plan Schedule Management | 0d? | 2023-07-07 | 2023-07-07 |  |
| 21 | Plan Cost Management | 1d? | 2023-07-10 | 2023-07-10 |  |
| 24 | Plan Stakeholder Engagement | 1d? | 2023-07-11 | 2023-07-11 | 20, 3 |
| 27 | Plan Risk Management | 0d? | 2023-07-11 | 2023-07-11 |  |
| 53 | **Design 12MP Ultra Wide Camera** | 0d? | 2023-07-11 | 2023-07-11 | 50 |
| 54 | Create Camera Prototype | 0d? | 2023-07-11 | 2023-07-11 |  |
| 55 | Test Camera Prototype | 0d? | 2023-07-11 | 2023-07-11 |  |
| 81 | **Design Augmented Reality Integration Software** | 3d? | 2023-07-12 | 2023-07-14 | 77, 53 |
| 82 | Design AR Integration Software Architecture | 1d? | 2023-07-12 | 2023-07-12 |  |
| 83 | Program AR Integration Software | 1d? | 2023-07-13 | 2023-07-13 | 82 |
| 84 | Test AR Integration Software | 1d? | 2023-07-14 | 2023-07-14 | 83 |
| 86 | Design App Store Container Architecture | 1d? | 2023-07-17 | 2023-07-17 |  |
| 87 | Program App Store Container Application | 1d? | 2023-07-18 | 2023-07-18 | 86 |
| 92 | **Manufacture Prototype Tablets** | 1d? | 2023-07-18 | 2023-07-19 |  |
| 99 | Manufacture 12MP Ultra Wide Camera | 1d? | 2023-07-19 | 2023-07-19 | 93 |
| 103 | **Obtain Prototype Quality Assurance Approval** | 3d? | 2023-07-20 | 2023-07-24 | 92 |
| 104 | Obtain Hardware Performance Verification | 1d? | 2023-07-20 | 2023-07-20 |  |
| 105 | Obtain Software Performance Verification | 1d? | 2023-07-20 | 2023-07-20 |  |
| 106 | Obtain Regulatory Compliance Verification | 1d? | 2023-07-21 | 2023-07-21 | 104, 105 |
| 107 | Obtain Test User Approval | 1d? | 2023-07-24 | 2023-07-24 | 106 |
| 108 | Quality Assurance Verification Obtained Milestone | 0d | 2023-07-24 | 2023-07-24 | 107 |

Removed: 13 Project Scope Management Plan Defined; 19 Project Schedule Management Plan Defined; 23 Project Cost Management Plan Defined; 25 Project Quality Planning Complete Milestone; 26 Plan Resource Management; 27 Estimate Activity Resources; 28 Project Resource Planning Complete Milestone; 29 Plan Communications Management; 30 Project Communications Planning Complete Milestone; 36 Project Risk Planning Complete Milestone; 50 Review by Hardware Designer; 85 Design UI/UX for App Store; 86 Program App Store; 109 Control Resources; 110 Monitor Communications; 112 Control Procurements

Changed:

| ID | Task | Start | Finish | Duration | Total float | Predecessors | Other |
| --- | --- | --- | --- | --- | --- | --- | --- |
| 1 | **Design iPad 10.9 by Eric Hanoun and Kyle Galway** |  | 2023-07-07 → 2023-07-24 (+17d) | 1d → 12d? |  |  | was named Develop iPad 10.9 by Eric Hanoun and Kyle Galway |
| 2 | **Initiation Phase** |  |  | 0d → 0d? |  |  |  |
| 3 | Identify Stakeholders |  |  | 1d? → 0d? | none → 0d |  |  |
| 4 | Develop Project charter |  |  | 1d? → 0d? | none → 0d | none → 3 |  |
| 5 | Hold Kick-off Meeting |  |  | 1d? → 0d? | none → 0d | none → 4 |  |
| 6 | Initiation Phase Complete Milestone |  |  |  | none → 0d | none → 5 |  |
| 7 | **Planning Phase** |  | 2023-07-07 → 2023-07-11 (+4d) | 1d → 3d? |  | none → 2 |  |
| 8 | Develop Project Management Plan |  |  | 1d? → 0d? | none → 3d | none → 4 |  |
| 9 | **Complete Scope Management Planning** |  |  | 1d → 1d? |  |  | was named Plan Scope Management |
| 11 | Collect Requirements |  |  | 1d → 0d? | 0d → -1d | none → 10 |  |
| 12 | Define Project Scope |  |  | 1d? → 0d? | none → -1d | none → 11 |  |
| 13 | Create Work Breakdown Structure |  |  | 1d → 0d? | 0d → -1d | none → 12 |  |
| 14 | **Complete Schedule Management Planning** |  |  | 1d → 0d? |  | none → 9 | was named Plan Schedule Management |
| 16 | Define Activites |  |  | 1d? → 0d? | none → -3d | none → 15 |  |
| 17 | Sequence Activities |  |  | 1d? → 0d? | none → -1d | none → 16 |  |
| 18 | Estimate Activity Durations |  |  | 1d → 0d? | 0d → -1d | none → 17 |  |
| 19 | Develop Schedule |  |  | 1d? → 0d? | none → -1d | none → 18 |  |
| 20 | **Complete Cost Management Planning** | 2023-07-07 → 2023-07-10 (+3d) | 2023-07-07 → 2023-07-10 (+3d) | 0d → 1d? |  | none → 14 | was named Plan Cost Management |
| 22 | Estimate Costs | 2023-07-07 → 2023-07-10 (+3d) | 2023-07-07 → 2023-07-10 (+3d) | 1d? → 0d? | none → -2d | none → 21 |  |
| 23 | Determine Project Budget | 2023-07-07 → 2023-07-10 (+3d) | 2023-07-07 → 2023-07-10 (+3d) | 1d? → 0d? | none → -2d | none → 22 |  |
| 25 | Plan Quality Management | 2023-07-07 → 2023-07-11 (+4d) | 2023-07-07 → 2023-07-11 (+4d) | 0d → 0d? | 0d → -3d | none → 24 |  |
| 26 | **Complete Risk Management Planning** | 2023-07-07 → 2023-07-11 (+4d) | 2023-07-07 → 2023-07-11 (+4d) | 0d → 0d? |  | none → 25 | was named Plan Risk Management |
| 28 | Identify Risks | 2023-07-07 → 2023-07-11 (+4d) | 2023-07-07 → 2023-07-11 (+4d) | 1d? → 0d? | none → -3d | none → 27 |  |
| 29 | Perform Qualitative Risk Analysis | 2023-07-07 → 2023-07-11 (+4d) | 2023-07-07 → 2023-07-11 (+4d) | 1d? → 0d? | none → -3d | none → 28 |  |
| 30 | Perform Quantitative Risk Analysis | 2023-07-07 → 2023-07-11 (+4d) | 2023-07-07 → 2023-07-11 (+4d) | 1d? → 0d? | none → -3d | none → 29 |  |
| 31 | Plan Risk Responses | 2023-07-07 → 2023-07-11 (+4d) | 2023-07-07 → 2023-07-11 (+4d) | 1d? → 0d? | none → -3d | none → 30 |  |
| 32 | Planning Phase Complete Milestone | 2023-07-07 → 2023-07-11 (+4d) | 2023-07-07 → 2023-07-11 (+4d) | 0d → 0d? | none → -3d | none → 8, 9, 14, 20, 25, 26 |  |
| 33 | **Executing Phase** | 2023-07-07 → 2023-07-11 (+4d) | 2023-07-07 → 2023-07-24 (+17d) | 0d → 9d? |  | none → 7 |  |
| 34 | **Project Integration Management** | 2023-07-07 → 2023-07-11 (+4d) | 2023-07-07 → 2023-07-11 (+4d) | 0d → 0d? | 1d → 9d |  |  |
| 35 | Direct and Manage Project Work | 2023-07-07 → 2023-07-11 (+4d) | 2023-07-07 → 2023-07-11 (+4d) | 1d? → 0d? | none → 1d | none → 8 |  |
| 36 | Manage Project Knowledge | 2023-07-07 → 2023-07-11 (+4d) | 2023-07-07 → 2023-07-11 (+4d) | 1d? → 0d? | none → 1d | none → 35SS |  |
| 37 | **Create Proposal** | 2023-07-07 → 2023-07-11 (+4d) | 2023-07-07 → 2023-07-11 (+4d) | 0d → 0d? |  |  |  |
| 38 | Conduct Market Research | 2023-07-07 → 2023-07-11 (+4d) | 2023-07-07 → 2023-07-11 (+4d) | 1d? → 0d? | none → 0d |  |  |
| 39 | Consult with Company Stakeholders | 2023-07-07 → 2023-07-11 (+4d) | 2023-07-07 → 2023-07-11 (+4d) | 1d? → 0d? | none → 0d |  |  |
| 40 | Develop Project Proposal | 2023-07-07 → 2023-07-11 (+4d) | 2023-07-07 → 2023-07-11 (+4d) | 1d? → 0d? | none → 0d | none → 39SF, 38SF |  |
| 41 | Approval Finalized Milestone | 2023-07-07 → 2023-07-11 (+4d) | 2023-07-07 → 2023-07-11 (+4d) | 0d → 0d? | none → 0d | none → 40 | was named Proposal Creation Approved Milestone |
| 42 | **Obtain Approval** | 2023-07-07 → 2023-07-11 (+4d) | 2023-07-07 → 2023-07-11 (+4d) | 0d → 0d? |  | none → 37 |  |
| 43 | Discuss with Company Stakeholders | 2023-07-07 → 2023-07-11 (+4d) | 2023-07-07 → 2023-07-11 (+4d) | 1d? → 0d? | none → 0d |  |  |
| 44 | Review by Lead Designer | 2023-07-07 → 2023-07-11 (+4d) | 2023-07-07 → 2023-07-11 (+4d) | 1d? → 0d? | none → 0d | none → 43 |  |
| 45 | Review by Hardware Designer | 2023-07-07 → 2023-07-11 (+4d) | 2023-07-07 → 2023-07-11 (+4d) | 1d? → 0d? | none → 0d | none → 43 |  |
| 46 | Review by Software Designer | 2023-07-07 → 2023-07-11 (+4d) | 2023-07-07 → 2023-07-11 (+4d) | 1d? → 0d? | none → 0d | none → 43 |  |
| 47 | Project Approval Obtained Milestone | 2023-07-07 → 2023-07-11 (+4d) | 2023-07-07 → 2023-07-11 (+4d) | 0d → 0d? | none → 0d | none → 44, 45, 46 |  |
| 48 | **Design the Tablet** | 2023-07-07 → 2023-07-11 (+4d) | 2023-07-07 → 2023-07-18 (+11d) | 0d → 5d? |  | none → 42 | was named Tablet Design |
| 49 | **Hardware Design** | 2023-07-07 → 2023-07-11 (+4d) | 2023-07-07 → 2023-07-11 (+4d) | 0d → 0d? |  |  |  |
| 50 | **Design Liquid Retina Display** | 2023-07-07 → 2023-07-11 (+4d) | 2023-07-07 → 2023-07-11 (+4d) | 0d → 0d? | 1d → 0d |  | was named Screen Design |
| 51 | Create Screen Prototype | 2023-07-07 → 2023-07-11 (+4d) | 2023-07-07 → 2023-07-11 (+4d) | 1d? → 0d? | none → 0d |  |  |
| 52 | Test Screen Prototype | 2023-07-07 → 2023-07-11 (+4d) | 2023-07-07 → 2023-07-11 (+4d) | 1d? → 0d? | none → 0d | none → 51 |  |
| 56 | **Design Wifi 6 Adapter** | 2023-07-07 → 2023-07-11 (+4d) | 2023-07-07 → 2023-07-11 (+4d) | 0d → 0d? | 1d → 5d | none → 53 | was named Wifi 6 Design |
| 57 | Create Wi-fi 6 Adapter Prototype | 2023-07-07 → 2023-07-11 (+4d) | 2023-07-07 → 2023-07-11 (+4d) | 1d? → 0d? | none → 5d |  |  |
| 58 | Test Wi-fi 6 Adapter Prototype | 2023-07-07 → 2023-07-11 (+4d) | 2023-07-07 → 2023-07-11 (+4d) | 1d? → 0d? | none → 5d | none → 57 | was named Test Wi-fi Adapter Prototype |
| 59 | **Design Touch ID Scanner** | 2023-07-07 → 2023-07-11 (+4d) | 2023-07-07 → 2023-07-11 (+4d) | 0d → 0d? | 1d → 5d | none → 56 | was named Touch ID Design |
| 60 | Create Touch ID Scanner Prototype | 2023-07-07 → 2023-07-11 (+4d) | 2023-07-07 → 2023-07-11 (+4d) | 1d? → 0d? | none → 5d |  |  |
| 61 | Test Touch ID Scanner Prototype | 2023-07-07 → 2023-07-11 (+4d) | 2023-07-07 → 2023-07-11 (+4d) | 1d? → 0d? | none → 5d | none → 60 |  |
| 62 | **Design Apple Pencil** | 2023-07-07 → 2023-07-11 (+4d) | 2023-07-07 → 2023-07-11 (+4d) | 0d → 0d? | 1d → 5d | none → 59 | was named Apple Pencil Design |
| 63 | Create Apple Pencil Prototype | 2023-07-07 → 2023-07-11 (+4d) | 2023-07-07 → 2023-07-11 (+4d) | 1d? → 0d? | none → 5d |  |  |
| 64 | Test Apple Pencil Prototype | 2023-07-07 → 2023-07-11 (+4d) | 2023-07-07 → 2023-07-11 (+4d) | 1d? → 0d? | none → 5d | none → 63 |  |
| 65 | **Design Magic Keyboard Folio** | 2023-07-07 → 2023-07-11 (+4d) | 2023-07-07 → 2023-07-11 (+4d) | 0d → 0d? | 1d → 5d | none → 62 | was named Magic Keyboard Folio Design |
| 66 | Create Magic Keyboard Folio and Trackpad Prototype | 2023-07-07 → 2023-07-11 (+4d) | 2023-07-07 → 2023-07-11 (+4d) | 1d? → 0d? | none → 5d |  |  |
| 67 | Test Magic Keyboard Folio and Trackpad Prototype | 2023-07-07 → 2023-07-11 (+4d) | 2023-07-07 → 2023-07-11 (+4d) | 1d? → 0d? | none → 5d | none → 66 |  |
| 68 | **Performance Benchmarking Design** | 2023-07-07 → 2023-07-11 (+4d) | 2023-07-07 → 2023-07-11 (+4d) | 0d → 0d? | 1d → 5d | none → 65 |  |
| 69 | Develop A14 Bionic Chip Processor Prototype | 2023-07-07 → 2023-07-11 (+4d) | 2023-07-07 → 2023-07-11 (+4d) | 1d? → 0d? | none → 5d |  |  |
| 70 | Benchmark Processor Prototype | 2023-07-07 → 2023-07-11 (+4d) | 2023-07-07 → 2023-07-11 (+4d) | 1d? → 0d? | none → 5d | none → 69 |  |
| 71 | Hardware Design Complete Milestone | 2023-07-07 → 2023-07-11 (+4d) | 2023-07-07 → 2023-07-11 (+4d) | 0d → 0d? | none → 5d | none → 68 |  |
| 72 | **Software Design** | 2023-07-07 → 2023-07-11 (+4d) | 2023-07-07 → 2023-07-18 (+11d) | 0d → 5d? |  |  |  |
| 73 | **Develop iPadOS** | 2023-07-07 → 2023-07-11 (+4d) | 2023-07-07 → 2023-07-11 (+4d) | 0d → 0d? | 1d → 0d |  |  |
| 74 | Design UI/UX for Operating System GUI | 2023-07-07 → 2023-07-11 (+4d) | 2023-07-07 → 2023-07-11 (+4d) | 1d? → 0d? | none → 0d |  | was named Create UI/UX for Operating System GUI |
| 75 | Program OS | 2023-07-07 → 2023-07-11 (+4d) | 2023-07-07 → 2023-07-11 (+4d) | 1d? → 0d? | none → 0d | none → 74 |  |
| 76 | Benchmark OS Performance | 2023-07-07 → 2023-07-11 (+4d) | 2023-07-07 → 2023-07-11 (+4d) | 1d? → 0d? | none → 0d | none → 75 |  |
| 77 | **Design Canvas APP** | 2023-07-07 → 2023-07-11 (+4d) | 2023-07-07 → 2023-07-11 (+4d) | 0d → 0d? | 1d → 0d | none → 73 |  |
| 78 | Design UI/UX for Canvas | 2023-07-07 → 2023-07-11 (+4d) | 2023-07-07 → 2023-07-11 (+4d) | 1d? → 0d? | none → 0d |  |  |

| ID | Task | Start | Finish | Duration | Total float | Predecessors | Other |
| --- | --- | --- | --- | --- | --- | --- | --- |
| 79 | Program Canvas App | 2023-07-07 → 2023-07-11 (+4d) | 2023-07-07 → 2023-07-11 (+4d) | 1d? → 0d? | none → 0d | none → 78 |  |
| 80 | Test Canvas App | 2023-07-07 → 2023-07-11 (+4d) | 2023-07-07 → 2023-07-11 (+4d) | 1d? → 0d? | none → 0d | none → 79 |  |
| 85 | **Design App Store Support** | 2023-07-07 → 2023-07-17 (+10d) | 2023-07-07 → 2023-07-18 (+11d) | 0d → 2d? | 1d → 0d | none → 81 | was named Design App Store |
| 88 | Test Compatibility with App Store Web Application | 2023-07-07 → 2023-07-18 (+11d) | 2023-07-07 → 2023-07-18 (+11d) | 1d? → 0d? | none → 0d | none → 87 | was named Test Compatibility with App Store |
| 89 | Software Design Complete Milestone | 2023-07-07 → 2023-07-11 (+4d) | 2023-07-07 → 2023-07-11 (+4d) | 0d → 0d? | none → 5d |  | was named Software Design Completed Milestone |
| 90 | Tablet Design Complete Milestone | 2023-07-07 → 2023-07-18 (+11d) | 2023-07-07 → 2023-07-18 (+11d) | 0d → 0d? | none → 1d | none → 49, 72 |  |
| 91 | **Produce Tablet Prototypes** | 2023-07-07 → 2023-07-18 (+11d) | 2023-07-07 → 2023-07-19 (+12d) | 0d → 1d? |  | none → 49, 72 | was named Manufacturing Tablet |
| 93 | Meet with Manufacturing Team Lead | 2023-07-07 → 2023-07-18 (+11d) | 2023-07-07 → 2023-07-18 (+11d) | 1d? → 0d? | none → 0d |  | was named Send Plans to Manufacturing Team |
| 94 | Manufacture Liquid Retina Display | 2023-07-07 → 2023-07-18 (+11d) | 2023-07-07 → 2023-07-18 (+11d) | 1d? → 0d? | none → 1d | none → 93 | was named Manufacture Screen |
| 95 | Manufacture Magic Keyboard Folio and Trackpad | 2023-07-07 → 2023-07-18 (+11d) | 2023-07-07 → 2023-07-18 (+11d) | 1d? → 0d? | none → 1d | none → 93 |  |
| 96 | Manufacture Wi-fi 6 Adapter | 2023-07-07 → 2023-07-18 (+11d) | 2023-07-07 → 2023-07-18 (+11d) | 1d? → 0d? | none → 1d | none → 93 |  |
| 97 | Manufacture Touch ID Scanner | 2023-07-07 → 2023-07-18 (+11d) | 2023-07-07 → 2023-07-18 (+11d) | 1d? → 0d? | none → 1d | none → 93 |  |
| 98 | Manufacture Apple Pencil | 2023-07-07 → 2023-07-18 (+11d) | 2023-07-07 → 2023-07-18 (+11d) | 1d? → 0d? | none → 1d | none → 93 |  |
| 100 | Parts Manufacturing Complete Milestone | 2023-07-07 → 2023-07-19 (+12d) | 2023-07-07 → 2023-07-19 (+12d) | 0d → 0d? | none → 0d | none → 94, 95, 96, 97, 98, 99 |  |
| 101 | Assemble Tablets from Components | 2023-07-07 → 2023-07-19 (+12d) | 2023-07-07 → 2023-07-19 (+12d) | 1d? → 0d? | none → 0d | none → 100 | was named Assemble Tablet from Components |
| 102 | Manufacturing Complete Milestone | 2023-07-07 → 2023-07-19 (+12d) | 2023-07-07 → 2023-07-19 (+12d) | 0d → 0d? | none → 0d | none → 101 |  |
| 109 | Executing Phase Complete Milestone | 2023-07-07 → 2023-07-24 (+17d) | 2023-07-07 → 2023-07-24 (+17d) | 0d → 0d? | none → 0d | none → 103 |  |
| 110 | **Monitoring and Controlling Phase** | 2023-07-07 → 2023-07-11 (+4d) | 2023-07-07 → 2023-07-19 (+12d) | 0d → 6d? | 0d → 3d | none → 33SS |  |
| 111 | Monitor and Control Project Work | 2023-07-07 → 2023-07-11 (+4d) | 2023-07-07 → 2023-07-11 (+4d) | 1d? → 0d? | none → 9d | none → 35FF, 36FF |  |
| 112 | Perform integrated Change Control | 2023-07-07 → 2023-07-11 (+4d) | 2023-07-07 → 2023-07-11 (+4d) | 1d? → 0d? | none → 9d | none → 111FF |  |
| 113 | Validate Scope | 2023-07-07 → 2023-07-11 (+4d) | 2023-07-07 → 2023-07-11 (+4d) | 1d? → 0d? | none → 9d | none → 13, 37FF |  |
| 114 | Control Scope | 2023-07-07 → 2023-07-11 (+4d) | 2023-07-07 → 2023-07-11 (+4d) | 1d? → 0d? | none → 9d | none → 113FF |  |
| 115 | Control Schedule | 2023-07-07 → 2023-07-18 (+11d) | 2023-07-07 → 2023-07-18 (+11d) | 1d? → 0d? | none → 4d | none → 19, 48FF |  |
| 116 | Control Costs | 2023-07-07 → 2023-07-19 (+12d) | 2023-07-07 → 2023-07-19 (+12d) | 1d? → 0d? | none → 3d | none → 21, 48SS, 92FF |  |
| 117 | Control Quality | 2023-07-07 → 2023-07-18 (+11d) | 2023-07-07 → 2023-07-18 (+11d) | 1d? → 0d? | none → 4d | none → 25, 48FF, 42 |  |
| 118 | Monitor Risks | 2023-07-07 → 2023-07-11 (+4d) | 2023-07-07 → 2023-07-11 (+4d) | 1d? → 0d? | none → 9d | none → 31, 37FF |  |
| 119 | Monitor Stakeholder Engagement | 2023-07-07 → 2023-07-11 (+4d) | 2023-07-07 → 2023-07-11 (+4d) | 1d? → 0d? | none → 9d | none → 24, 42FF | was named monitor Stakeholder Engagement |
| 120 | Monitoring and Controlling Phase Complete Milestone | 2023-07-07 → 2023-07-11 (+4d) | 2023-07-07 → 2023-07-11 (+4d) | 0d → 0d? | none → 9d | none → 112 | was named Monitoring and Controlling Complete Milestone |
| 121 | **Closing** | 2023-07-07 → 2023-07-24 (+17d) | 2023-07-07 → 2023-07-24 (+17d) | 0d → 0d? |  | none → 33, 110 |  |
| 122 | Close Project or Phase | 2023-07-07 → 2023-07-24 (+17d) | 2023-07-07 → 2023-07-24 (+17d) | 1d? → 0d? | none → 0d | none → 112 |  |
| 123 | Project Complete Milestone | 2023-07-07 → 2023-07-24 (+17d) | 2023-07-07 → 2023-07-24 (+17d) | 0d → 0d? | none → 0d | none → 122 |  |

## Version 3 (saved 2023-07-16)

Note of the change: Complete main work for assignment 2.

Last finish 2023-07-24 → 2024-03-27 (+247d).

Added:

| ID | Task | Duration | Start | Finish | Predecessors | Constraint | Resources |
| --- | --- | --- | --- | --- | --- | --- | --- |
| 49 | Coordinate Design Teams | 95d | 2023-10-09 | 2024-02-16 | 42 |  | Tamsyn Corey (Lead Designer) |
| 52 | Design Screen Blueprints | 5d | 2023-10-09 | 2023-10-13 |  |  | Hardware Development Team |
| 56 | Design Camera Blueprints | 5d | 2023-10-23 | 2023-10-27 |  |  | Hardware Development Team |
| 60 | Design Wi-Fi 6 Adapter Blueprints | 5d | 2023-11-08 | 2023-11-14 |  |  | Hardware Development Team |
| 64 | Design Touch ID Scanner Blueprints | 5d | 2023-11-24 | 2023-11-30 |  |  | Hardware Development Team |
| 68 | Design Apple Pencil Blueprints | 5d | 2023-12-11 | 2023-12-15 |  |  | Hardware Development Team |
| 72 | Design Magic Keyboard Folio and Trackboard Blueprints | 5d | 2023-12-27 | 2024-01-02 |  |  | Hardware Development Team |
| 76 | Obtain Tablet Hardware Components | 26d | 2024-01-12 | 2024-02-16 |  | start no earlier than 2023-11-17 | Hardware Development Team; Shipping and Acquisition Fees [0.1%] |

Changed:

| ID | Task | Start | Finish | Duration | Total float | Predecessors | Other |
| --- | --- | --- | --- | --- | --- | --- | --- |
| 1 | **Design iPad 10.9 by Eric Hanoun and Kyle Galway** | 2023-07-07 → 2023-08-01 (+25d) | 2023-07-24 → 2024-03-27 (+247d) | 12d? → 172d |  |  |  |
| 2 | **Initiation Phase** | 2023-07-07 → 2023-08-01 (+25d) | 2023-07-07 → 2023-08-07 (+31d) | 0d? → 5d |  |  |  |
| 3 | Identify Stakeholders | 2023-07-07 → 2023-08-01 (+25d) | 2023-07-07 → 2023-08-01 (+25d) | 0d? → 1d |  |  | resources none → James (Muir) Project Manager |
| 4 | Develop Project charter | 2023-07-07 → 2023-08-02 (+26d) | 2023-07-07 → 2023-08-04 (+28d) | 0d? → 3d |  |  | resources none → James (Muir) Project Manager |
| 5 | Hold Kick-off Meeting | 2023-07-07 → 2023-08-07 (+31d) | 2023-07-07 → 2023-08-07 (+31d) | 0d? → 1d |  |  | resources none → Tamsyn Corey (Lead Designer); James (Muir) Project Manager; Meeting and Catering Costs [0.1%] |
| 6 | Initiation Phase Complete Milestone | 2023-07-07 → 2023-08-07 (+31d) | 2023-07-07 → 2023-08-07 (+31d) |  |  |  |  |
| 7 | **Planning Phase** | 2023-07-07 → 2023-08-08 (+32d) | 2023-07-11 → 2023-09-26 (+77d) | 3d? → 36d |  |  |  |
| 8 | Develop Project Management Plan | 2023-07-07 → 2023-08-08 (+32d) | 2023-07-07 → 2023-08-14 (+38d) | 0d? → 1w | 3d → 0d |  | resources none → James (Muir) Project Manager |
| 9 | **Complete Scope Management Planning** | 2023-07-07 → 2023-08-15 (+39d) | 2023-07-07 → 2023-08-22 (+46d) | 1d? → 6d |  | none → 8 |  |
| 10 | Plan Scope Management | 2023-07-07 → 2023-08-15 (+39d) | 2023-07-07 → 2023-08-16 (+40d) | 1d? → 2d | -3d → 0d |  | resources none → James (Muir) Project Manager |
| 11 | Collect Requirements | 2023-07-07 → 2023-08-17 (+41d) | 2023-07-07 → 2023-08-17 (+41d) | 0d? → 1d | -1d → 0d |  | resources none → James (Muir) Project Manager |
| 12 | Define Project Scope | 2023-07-07 → 2023-08-18 (+42d) | 2023-07-07 → 2023-08-18 (+42d) | 0d? → 1d | -1d → 0d |  | resources none → James (Muir) Project Manager |
| 13 | Create Work Breakdown Structure | 2023-07-07 → 2023-08-21 (+45d) | 2023-07-07 → 2023-08-22 (+46d) | 0d? → 2d | -1d → 0d |  | resources none → James (Muir) Project Manager |
| 14 | **Complete Schedule Management Planning** | 2023-07-07 → 2023-08-23 (+47d) | 2023-07-07 → 2023-08-31 (+55d) | 0d? → 7d |  |  |  |
| 15 | Plan Schedule Management | 2023-07-07 → 2023-08-23 (+47d) | 2023-07-07 → 2023-08-24 (+48d) | 0d? → 2d | -3d → 0d |  | resources none → James (Muir) Project Manager |
| 16 | Define Activites | 2023-07-07 → 2023-08-25 (+49d) | 2023-07-07 → 2023-08-25 (+49d) | 0d? → 1d | -3d → 0d |  | resources none → James (Muir) Project Manager |
| 17 | Sequence Activities | 2023-07-07 → 2023-08-28 (+52d) | 2023-07-07 → 2023-08-28 (+52d) | 0d? → 1d | -1d → 0d |  | resources none → James (Muir) Project Manager |
| 18 | Estimate Activity Durations | 2023-07-07 → 2023-08-29 (+53d) | 2023-07-07 → 2023-08-29 (+53d) | 0d? → 1d | -1d → 0d |  | resources none → James (Muir) Project Manager |
| 19 | Develop Schedule | 2023-07-07 → 2023-08-30 (+54d) | 2023-07-07 → 2023-08-31 (+55d) | 0d? → 2d | -1d → 0d |  | resources none → James (Muir) Project Manager |
| 20 | **Complete Cost Management Planning** | 2023-07-10 → 2023-09-01 (+53d) | 2023-07-10 → 2023-09-07 (+59d) | 1d? → 5d |  |  |  |
| 21 | Plan Cost Management | 2023-07-10 → 2023-09-01 (+53d) | 2023-07-10 → 2023-09-04 (+56d) | 1d? → 2d | -3d → 0d |  | resources none → James (Muir) Project Manager |
| 22 | Estimate Costs | 2023-07-10 → 2023-09-05 (+57d) | 2023-07-10 → 2023-09-05 (+57d) | 0d? → 1d | -2d → 0d |  | resources none → James (Muir) Project Manager |
| 23 | Determine Project Budget | 2023-07-10 → 2023-09-06 (+58d) | 2023-07-10 → 2023-09-07 (+59d) | 0d? → 2d | -2d → 0d |  | resources none → James (Muir) Project Manager |
| 24 | Plan Stakeholder Engagement | 2023-07-11 → 2023-09-08 (+59d) | 2023-07-11 → 2023-09-11 (+62d) | 1d? → 2d | -3d → 0d |  | resources none → James (Muir) Project Manager |
| 25 | Plan Quality Management | 2023-07-11 → 2023-09-12 (+63d) | 2023-07-11 → 2023-09-13 (+64d) | 0d? → 2d | -3d → 0d |  | resources none → James (Muir) Project Manager |
| 26 | **Complete Risk Management Planning** | 2023-07-11 → 2023-09-14 (+65d) | 2023-07-11 → 2023-09-26 (+77d) | 0d? → 9d |  |  |  |
| 27 | Plan Risk Management | 2023-07-11 → 2023-09-14 (+65d) | 2023-07-11 → 2023-09-15 (+66d) | 0d? → 2d | -3d → 0d |  | resources none → James (Muir) Project Manager |
| 28 | Identify Risks | 2023-07-11 → 2023-09-18 (+69d) | 2023-07-11 → 2023-09-18 (+69d) | 0d? → 1d | -3d → 0d |  | resources none → James (Muir) Project Manager |
| 29 | Perform Qualitative Risk Analysis | 2023-07-11 → 2023-09-19 (+70d) | 2023-07-11 → 2023-09-20 (+71d) | 0d? → 2d | -3d → 0d |  | resources none → James (Muir) Project Manager |
| 30 | Perform Quantitative Risk Analysis | 2023-07-11 → 2023-09-21 (+72d) | 2023-07-11 → 2023-09-22 (+73d) | 0d? → 2d | -3d → 0d |  | resources none → James (Muir) Project Manager |
| 31 | Plan Risk Responses | 2023-07-11 → 2023-09-25 (+76d) | 2023-07-11 → 2023-09-26 (+77d) | 0d? → 2d | -3d → 0d |  | resources none → James (Muir) Project Manager |
| 32 | Planning Phase Complete Milestone | 2023-07-11 → 2023-09-26 (+77d) | 2023-07-11 → 2023-09-26 (+77d) | 0d? → 0d | -3d → 0d | 8, 9, 14, 20, 25, 26 → 9, 26 |  |
| 33 | **Executing Phase** | 2023-07-11 → 2023-09-27 (+78d) | 2023-07-24 → 2024-03-20 (+240d) | 9d? → 126d |  |  |  |
| 34 | **Project Integration Management** | 2023-07-11 → 2023-09-27 (+78d) | 2023-07-11 → 2024-03-20 (+253d) | 0d? → 126d | 9d → 0d |  |  |
| 35 | Direct and Manage Project Work | 2023-07-11 → 2023-09-27 (+78d) | 2023-07-11 → 2024-03-20 (+253d) | 0d? → 126d | 1d → 0d |  | constraint none → start no earlier than 2023-08-28; resources none → James (Muir) Project Manager [85%] |
| 36 | Manage Project Knowledge | 2023-07-11 → 2023-09-27 (+78d) | 2023-07-11 → 2024-03-20 (+253d) | 0d? → 126d | 1d → 0d |  | constraint none → start no earlier than 2023-08-03; resources none → James (Muir) Project Manager [5%] |
| 37 | **Create Proposal** | 2023-07-11 → 2023-09-27 (+78d) | 2023-07-11 → 2023-10-02 (+83d) | 0d? → 4d |  |  |  |
| 38 | Conduct Market Research | 2023-07-11 → 2023-09-27 (+78d) | 2023-07-11 → 2023-10-02 (+83d) | 0d? → 4d |  |  | resources none → Tamsyn Corey (Lead Designer) [50%] |
| 39 | Consult with Company Stakeholders | 2023-07-11 → 2023-09-27 (+78d) | 2023-07-11 → 2023-09-28 (+79d) | 0d? → 2d | 0d → 2d |  | resources none → Tamsyn Corey (Lead Designer) [50%] |
| 40 | Develop Project Proposal | 2023-07-11 → 2023-09-29 (+80d) | 2023-07-11 → 2023-10-02 (+83d) | 0d? → 2d |  | 39SF, 38SF → 39SF, 38FF | resources none → Tamsyn Corey (Lead Designer) [50%] |
| 41 | Approval Finalized Milestone | 2023-07-11 → 2023-10-02 (+83d) | 2023-07-11 → 2023-10-02 (+83d) | 0d? → 0d |  |  |  |
| 42 | **Obtain Approval** | 2023-07-11 → 2023-10-02 (+83d) | 2023-07-11 → 2023-10-06 (+87d) | 0d? → 4d |  |  |  |
| 43 | Discuss with Company Stakeholders | 2023-07-11 → 2023-10-02 (+83d) | 2023-07-11 → 2023-10-02 (+83d) | 0d? → 0d |  |  | resources none → Tamsyn Corey (Lead Designer); Meeting and Catering Costs [0.1%] |
| 44 | Review by Manufacturing Engineer Team | 2023-07-11 → 2023-10-03 (+84d) | 2023-07-11 → 2023-10-06 (+87d) | 0d? → 4d |  |  | was named Review by Lead Designer; resources none → Manufacturing Engineer Team |
| 45 | Review by Hardware Development Team | 2023-07-11 → 2023-10-03 (+84d) | 2023-07-11 → 2023-10-06 (+87d) | 0d? → 4d |  |  | was named Review by Hardware Designer; resources none → Software Developer Team |
| 46 | Review by Software Development Team | 2023-07-11 → 2023-10-03 (+84d) | 2023-07-11 → 2023-10-06 (+87d) | 0d? → 4d |  |  | was named Review by Software Designer; resources none → Software Developer Team |
| 47 | Project Approval Obtained Milestone | 2023-07-11 → 2023-10-06 (+87d) | 2023-07-11 → 2023-10-06 (+87d) | 0d? → 0d |  |  |  |
| 48 | **Design the Tablet** | 2023-07-11 → 2023-10-09 (+90d) | 2023-07-18 → 2024-02-16 (+213d) | 5d? → 95d |  |  |  |
| 50 | **Hardware Design** | 2023-07-11 → 2023-10-09 (+90d) | 2023-07-11 → 2024-02-16 (+220d) | 0d? → 95d |  |  |  |
| 51 | **Design Liquid Retina Display** | 2023-07-11 → 2023-10-09 (+90d) | 2023-07-11 → 2023-10-20 (+101d) | 0d? → 10d |  |  |  |
| 53 | Create Screen Prototype | 2023-07-11 → 2023-10-16 (+97d) | 2023-07-11 → 2023-10-18 (+99d) | 0d? → 3d |  | none → 52 | resources none → Hardware Development Team |
| 54 | Test Screen Prototype | 2023-07-11 → 2023-10-19 (+100d) | 2023-07-11 → 2023-10-20 (+101d) | 0d? → 2d |  |  | resources none → Hardware Development Team |
| 55 | **Design 12MP Ultra Wide Camera** | 2023-07-11 → 2023-10-23 (+104d) | 2023-07-11 → 2023-11-07 (+119d) | 0d? → 12d |  |  |  |
| 57 | Create Camera Prototype | 2023-07-11 → 2023-10-30 (+111d) | 2023-07-11 → 2023-10-31 (+112d) | 0d? → 2d | none → 0d | none → 56 | resources none → Hardware Development Team |
| 58 | Test Camera Prototype | 2023-07-11 → 2023-11-01 (+113d) | 2023-07-11 → 2023-11-07 (+119d) | 0d? → 5d | none → 0d | none → 57 | resources none → Hardware Development Team |
| 59 | **Design Wifi 6 Adapter** | 2023-07-11 → 2023-11-08 (+120d) | 2023-07-11 → 2023-11-23 (+135d) | 0d? → 12d | 5d → 0d |  |  |
| 61 | Create Wi-Fi 6 Adapter Prototype | 2023-07-11 → 2023-11-15 (+127d) | 2023-07-11 → 2023-11-16 (+128d) | 0d? → 2d | 5d → 0d | none → 60 | was named Create Wi-fi 6 Adapter Prototype; resources none → Hardware Development Team |
| 62 | Test Wi-Fi 6 Adapter Prototype | 2023-07-11 → 2023-11-17 (+129d) | 2023-07-11 → 2023-11-23 (+135d) | 0d? → 5d | 5d → 0d |  | was named Test Wi-fi 6 Adapter Prototype; resources none → Hardware Development Team |
| 63 | **Design Touch ID Scanner** | 2023-07-11 → 2023-11-24 (+136d) | 2023-07-11 → 2023-12-08 (+150d) | 0d? → 11d | 5d → 0d |  |  |
| 65 | Create Touch ID Scanner Prototype | 2023-07-11 → 2023-12-01 (+143d) | 2023-07-11 → 2023-12-04 (+146d) | 0d? → 2d | 5d → 0d | none → 64 | resources none → Hardware Development Team |
| 66 | Test Touch ID Scanner Prototype | 2023-07-11 → 2023-12-05 (+147d) | 2023-07-11 → 2023-12-08 (+150d) | 0d? → 4d | 5d → 0d |  | resources none → Hardware Development Team |
| 67 | **Design Apple Pencil** | 2023-07-11 → 2023-12-11 (+153d) | 2023-07-11 → 2023-12-26 (+168d) | 0d? → 12d | 5d → 0d |  |  |
| 69 | Create Apple Pencil Prototyps | 2023-07-11 → 2023-12-18 (+160d) | 2023-07-11 → 2023-12-19 (+161d) | 0d? → 2d | 5d → 0d | none → 68 | was named Create Apple Pencil Prototype; resources none → Hardware Development Team |
| 70 | Test Apple Pencil Prototype | 2023-07-11 → 2023-12-20 (+162d) | 2023-07-11 → 2023-12-26 (+168d) | 0d? → 5d | 5d → 0d |  | resources none → Hardware Development Team |
| 71 | **Design Magic Keyboard Folio** | 2023-07-11 → 2023-12-27 (+169d) | 2023-07-11 → 2024-01-11 (+184d) | 0d? → 12d | 5d → 0d |  |  |
| 73 | Create Magic Keyboard Folio and Trackpad Prototype | 2023-07-11 → 2024-01-03 (+176d) | 2023-07-11 → 2024-01-04 (+177d) | 0d? → 2d | 5d → 0d | none → 72 | resources none → Hardware Development Team |
| 74 | Test Magic Keyboard Folio and Trackpad Prototype | 2023-07-11 → 2024-01-05 (+178d) | 2023-07-11 → 2024-01-11 (+184d) | 0d? → 5d | 5d → 0d |  | resources none → Hardware Development Team |
| 75 | **Performance Benchmarking Design** | 2023-07-11 → 2024-01-12 (+185d) | 2023-07-11 → 2024-02-16 (+220d) | 0d? → 26d | 5d → 0d |  |  |
| 77 | Develop A14 Bionic Chip Processor Prototype | 2023-07-11 → 2024-01-12 (+185d) | 2023-07-11 → 2024-01-18 (+191d) | 0d? → 5d | 5d → 16d |  | resources none → Hardware Development Team |
| 78 | Benchmark Processor Prototype | 2023-07-11 → 2024-01-19 (+192d) | 2023-07-11 → 2024-01-25 (+198d) | 0d? → 5d | 5d → 16d |  | resources none → Hardware Development Team |

| ID | Task | Start | Finish | Duration | Total float | Predecessors | Other |
| --- | --- | --- | --- | --- | --- | --- | --- |
| 79 | Hardware Design Complete Milestone | 2023-07-11 → 2024-02-16 (+220d) | 2023-07-11 → 2024-02-16 (+220d) | 0d? → 0d | 5d → 0d |  |  |
| 80 | **Software Design** | 2023-07-11 → 2023-10-09 (+90d) | 2023-07-18 → 2024-02-16 (+213d) | 5d? → 95d |  |  |  |
| 81 | **Develop iPadOS** | 2023-07-11 → 2023-10-09 (+90d) | 2023-07-11 → 2023-11-17 (+129d) | 0d? → 30d |  |  |  |
| 82 | Design UI/UX for Operating System GUI | 2023-07-11 → 2023-10-09 (+90d) | 2023-07-11 → 2023-10-13 (+94d) | 0d? → 1w |  |  | resources none → Software Developer Team |
| 83 | Program OS | 2023-07-11 → 2023-10-16 (+97d) | 2023-07-11 → 2023-11-10 (+122d) | 0d? → 1mo |  |  | resources none → Software Developer Team |
| 84 | Optimize OS Performance | 2023-07-11 → 2023-11-13 (+125d) | 2023-07-11 → 2023-11-17 (+129d) | 0d? → 1w |  |  | was named Benchmark OS Performance; resources none → Software Developer Team |
| 85 | **Design Canvas APP** | 2023-07-11 → 2023-11-20 (+132d) | 2023-07-11 → 2023-12-15 (+157d) | 0d? → 20d |  |  |  |
| 86 | Design UI/UX for Canvas | 2023-07-11 → 2023-11-20 (+132d) | 2023-07-11 → 2023-11-24 (+136d) | 0d? → 1w |  |  | resources none → Software Developer Team |
| 87 | Program Canvas App | 2023-07-11 → 2023-11-27 (+139d) | 2023-07-11 → 2023-12-08 (+150d) | 0d? → 2w |  |  | resources none → Software Developer Team |
| 88 | Test Canvas App | 2023-07-11 → 2023-12-11 (+153d) | 2023-07-11 → 2023-12-15 (+157d) | 0d? → 1w |  |  | resources none → Software Developer Team |
| 89 | **Design Augmented Reality Integration Software** | 2023-07-12 → 2023-12-18 (+159d) | 2023-07-14 → 2024-01-26 (+196d) | 3d? → 30d |  |  |  |
| 90 | Design AR Integration Software Architecture | 2023-07-12 → 2023-12-18 (+159d) | 2023-07-12 → 2023-12-29 (+170d) | 1d? → 2w |  |  | resources none → Software Developer Team |
| 91 | Program AR Integration Software | 2023-07-13 → 2024-01-01 (+172d) | 2023-07-13 → 2024-01-12 (+183d) | 1d? → 2w |  |  | resources none → Software Developer Team |
| 92 | Test AR Integration Software | 2023-07-14 → 2024-01-15 (+185d) | 2023-07-14 → 2024-01-26 (+196d) | 1d? → 2w |  |  | resources none → Software Developer Team |
| 93 | **Design App Store Support** | 2023-07-17 → 2024-01-29 (+196d) | 2023-07-18 → 2024-02-16 (+213d) | 2d? → 15d |  |  |  |
| 94 | Design App Store Container Architecture | 2023-07-17 → 2024-01-29 (+196d) | 2023-07-17 → 2024-02-02 (+200d) | 1d? → 1w |  |  | resources none → Software Developer Team |
| 95 | Program App Store Container Application | 2023-07-18 → 2024-02-05 (+202d) | 2023-07-18 → 2024-02-09 (+206d) | 1d? → 1w |  |  | resources none → Software Developer Team |
| 96 | Test Compatibility with App Store Web Application | 2023-07-18 → 2024-02-12 (+209d) | 2023-07-18 → 2024-02-16 (+213d) | 0d? → 1w |  |  | resources none → Software Developer Team |
| 97 | Software Design Complete Milestone | 2023-07-11 → 2024-02-16 (+220d) | 2023-07-11 → 2024-02-16 (+220d) | 0d? → 0d | 5d → 0d | none → 93 |  |
| 98 | Tablet Design Complete Milestone | 2023-07-18 → 2024-02-16 (+213d) | 2023-07-18 → 2024-02-16 (+213d) | 0d? → 0d | 1d → 23d | 50, 80 → 50, 80, 49FF |  |
| 99 | **Produce Tablet Prototypes** | 2023-07-18 → 2024-02-19 (+216d) | 2023-07-19 → 2024-02-28 (+224d) | 1d? → 8d |  |  |  |
| 100 | **Manufacture Prototype Tablets** | 2023-07-18 → 2024-02-19 (+216d) | 2023-07-19 → 2024-02-28 (+224d) | 1d? → 8d |  |  |  |
| 101 | Meet with Manufacturing Team Lead | 2023-07-18 → 2024-02-19 (+216d) | 2023-07-18 → 2024-02-19 (+216d) | 0d? → 1d |  |  | resources none → Tamsyn Corey (Lead Designer); Manufacturing Engineer Team |
| 102 | Manufacture Liquid Retina Display | 2023-07-18 → 2024-02-19 (+216d) | 2023-07-18 → 2024-02-26 (+223d) | 0d? → 1w | 1d → 0d |  | resources none → Manufacturing Engineer Team [40%]; Manufacturing and Production Fees [0.1%] |
| 103 | Manufacture Magic Keyboard Folio and Trackpad | 2023-07-18 → 2024-02-19 (+216d) | 2023-07-18 → 2024-02-26 (+223d) | 0d? → 1w | 1d → 0d |  | resources none → Manufacturing Engineer Team [30%]; Manufacturing and Production Fees [0.1%] |
| 104 | Manufacture Wi-fi 6 Adapter | 2023-07-18 → 2024-02-19 (+216d) | 2023-07-18 → 2024-02-26 (+223d) | 0d? → 1w | 1d → 0d |  | resources none → Manufacturing Engineer Team [30%]; Manufacturing and Production Fees [0.1%] |
| 105 | Manufacture Touch ID Scanner | 2023-07-18 → 2024-02-19 (+216d) | 2023-07-18 → 2024-02-26 (+223d) | 0d? → 1w | 1d → 0d |  | resources none → Manufacturing Engineer Team [30%]; Manufacturing and Production Fees [0.1%] |
| 106 | Manufacture Apple Pencil | 2023-07-18 → 2024-02-19 (+216d) | 2023-07-18 → 2024-02-26 (+223d) | 0d? → 1w | 1d → 0d |  | resources none → Manufacturing Engineer Team [30%]; Manufacturing and Production Fees [0.1%] |
| 107 | Manufacture 12MP Ultra Wide Camera | 2023-07-19 → 2024-02-20 (+216d) | 2023-07-19 → 2024-02-26 (+222d) | 1d? → 1w |  |  | resources none → Manufacturing Engineer Team [40%] |
| 108 | Parts Manufacturing Complete Milestone | 2023-07-19 → 2024-02-26 (+222d) | 2023-07-19 → 2024-02-26 (+222d) | 0d? → 0d |  |  |  |
| 109 | Assemble Tablets from Components | 2023-07-19 → 2024-02-27 (+223d) | 2023-07-19 → 2024-02-28 (+224d) | 0d? → 2d |  |  | resources none → Manufacturing Engineer Team; Shipping and Acquisition Fees [0.1%] |
| 110 | Manufacturing Complete Milestone | 2023-07-19 → 2024-02-28 (+224d) | 2023-07-19 → 2024-02-28 (+224d) | 0d? → 0d |  |  |  |
| 111 | **Obtain Prototype Quality Assurance Approval** | 2023-07-20 → 2024-02-29 (+224d) | 2023-07-24 → 2024-03-20 (+240d) | 3d? → 15d |  |  |  |
| 112 | Obtain Hardware Performance Verification | 2023-07-20 → 2024-02-29 (+224d) | 2023-07-20 → 2024-03-06 (+230d) | 1d? → 1w |  |  | resources none → Quality Assurance Team |
| 113 | Obtain Software Performance Verification | 2023-07-20 → 2024-02-29 (+224d) | 2023-07-20 → 2024-03-06 (+230d) | 1d? → 1w |  |  | resources none → Quality Assurance Team |
| 114 | Obtain Regulatory Compliance Verification | 2023-07-21 → 2024-03-07 (+230d) | 2023-07-21 → 2024-03-20 (+243d) | 1d? → 2w |  |  | resources none → Quality Assurance Team |
| 115 | Obtain Test User Approval | 2023-07-24 → 2024-03-07 (+227d) | 2023-07-24 → 2024-03-20 (+240d) | 1d? → 2w |  | 114 → 112, 113 | resources none → Quality Assurance Team |
| 116 | Quality Assurance Verification Obtained Milestone | 2023-07-24 → 2024-03-20 (+240d) | 2023-07-24 → 2024-03-20 (+240d) |  |  |  |  |
| 117 | Executing Phase Complete Milestone | 2023-07-24 → 2024-03-20 (+240d) | 2023-07-24 → 2024-03-20 (+240d) | 0d? → 0d |  | 111 → 111, 35, 36 |  |
| 118 | **Monitoring and Controlling Phase** | 2023-07-11 → 2023-09-27 (+78d) | 2023-07-19 → 2024-03-20 (+245d) | 6d? → 126d | 3d → 0d | 33SS → 7 |  |
| 119 | Monitor and Control Project Work | 2023-07-11 → 2023-09-27 (+78d) | 2023-07-11 → 2024-03-20 (+253d) | 0d? → 126d | 9d → 0d |  | resources none → James (Muir) Project Manager [2%] |
| 120 | Perform integrated Change Control | 2023-07-11 → 2023-09-27 (+78d) | 2023-07-11 → 2024-03-20 (+253d) | 0d? → 126d | 9d → 0d |  | resources none → James (Muir) Project Manager [1%] |
| 121 | Monitor Risks | 2023-07-11 → 2023-09-27 (+78d) | 2023-07-11 → 2023-10-03 (+84d) | 0d? → 5d | 9d → 121d |  | resources none → James (Muir) Project Manager [1%] |
| 122 | Validate Scope | 2023-07-11 → 2023-10-02 (+83d) | 2023-07-11 → 2023-10-06 (+87d) | 0d? → 4d | 9d → 118d | 13, 37FF → 13, 42FF | resources none → James (Muir) Project Manager [2%] |
| 123 | Control Scope | 2023-07-11 → 2023-09-27 (+78d) | 2023-07-11 → 2023-10-06 (+87d) | 0d? → 8d | 9d → 118d | 122FF → 122SF, 37FF | resources none → James (Muir) Project Manager [1%] |
| 124 | Control Schedule | 2023-07-18 → 2023-10-06 (+80d) | 2023-07-18 → 2024-02-16 (+213d) | 0d? → 96d | 4d → 23d |  | resources none → James (Muir) Project Manager [2%] |
| 125 | Control Quality | 2023-07-18 → 2023-10-06 (+80d) | 2023-07-18 → 2024-02-16 (+213d) | 0d? → 96d | 4d → 23d | 25, 48FF, 42 → 25, 48FF | resources none → James (Muir) Project Manager [1%] |
| 126 | Control Costs | 2023-07-19 → 2023-10-09 (+82d) | 2023-07-19 → 2024-03-01 (+226d) | 0d? → 105d | 3d → 13d |  | resources none → James (Muir) Project Manager [2%] |
| 127 | Monitor Stakeholder Engagement | 2023-07-11 → 2023-10-02 (+83d) | 2023-07-11 → 2024-02-19 (+223d) | 0d? → 100d | 9d → 22d | 24, 42FF → 24, 42SS, 48FF | resources none → James (Muir) Project Manager [1%] |
| 128 | Monitoring and Controlling Phase Complete Milestone | 2023-07-11 → 2024-03-20 (+253d) | 2023-07-11 → 2024-03-20 (+253d) | 0d? → 0d | 9d → 0d |  |  |
| 129 | **Closing** | 2023-07-24 → 2024-03-20 (+240d) | 2023-07-24 → 2024-03-27 (+247d) | 0d? → 5d |  |  |  |
| 130 | Close Project or Phase | 2023-07-24 → 2024-03-20 (+240d) | 2023-07-24 → 2024-03-27 (+247d) | 0d? → 1w |  |  | resources none → Tamsyn Corey (Lead Designer); James (Muir) Project Manager; Meeting and Catering Costs [0.1%] |
| 131 | Project Complete Milestone | 2023-07-24 → 2024-03-27 (+247d) | 2023-07-24 → 2024-03-27 (+247d) | 0d? → 0d |  |  |  |

## Version 4 (saved 2023-07-16)

Note of the change: Test

Last finish stays 2024-03-27.

Changed:

| ID | Task | Start | Finish | Duration | Total float | Predecessors | Other |
| --- | --- | --- | --- | --- | --- | --- | --- |
| 3 | Identify Stakeholders |  |  |  |  |  | resources James (Muir) Project Manager → James Muir (Project Manager) |
| 4 | Develop Project charter |  |  |  |  |  | resources James (Muir) Project Manager → James Muir (Project Manager) |
| 5 | Hold Kick-off Meeting |  |  |  |  |  | resources Tamsyn Corey (Lead Designer); James (Muir) Project Manager; Meeting and Catering Costs [0.1%] → Tamsyn Corey (Lead Designer); James Muir (Project Manager); Meeting and Catering Costs [0.1%] |
| 8 | Develop Project Management Plan |  |  |  |  |  | resources James (Muir) Project Manager → James Muir (Project Manager) |
| 10 | Plan Scope Management |  |  |  |  |  | resources James (Muir) Project Manager → James Muir (Project Manager) |
| 11 | Collect Requirements |  |  |  |  |  | resources James (Muir) Project Manager → James Muir (Project Manager) |
| 12 | Define Project Scope |  |  |  |  |  | resources James (Muir) Project Manager → James Muir (Project Manager) |
| 13 | Create Work Breakdown Structure |  |  |  |  |  | resources James (Muir) Project Manager → James Muir (Project Manager) |
| 15 | Plan Schedule Management |  |  |  |  |  | resources James (Muir) Project Manager → James Muir (Project Manager) |
| 16 | Define Activites |  |  |  |  |  | resources James (Muir) Project Manager → James Muir (Project Manager) |
| 17 | Sequence Activities |  |  |  |  |  | resources James (Muir) Project Manager → James Muir (Project Manager) |
| 18 | Estimate Activity Durations |  |  |  |  |  | resources James (Muir) Project Manager → James Muir (Project Manager) |
| 19 | Develop Schedule |  |  |  |  |  | resources James (Muir) Project Manager → James Muir (Project Manager) |
| 21 | Plan Cost Management |  |  |  |  |  | resources James (Muir) Project Manager → James Muir (Project Manager) |
| 22 | Estimate Costs |  |  |  |  |  | resources James (Muir) Project Manager → James Muir (Project Manager) |
| 23 | Determine Project Budget |  |  |  |  |  | resources James (Muir) Project Manager → James Muir (Project Manager) |
| 24 | Plan Stakeholder Engagement |  |  |  |  |  | resources James (Muir) Project Manager → James Muir (Project Manager) |
| 25 | Plan Quality Management |  |  |  |  |  | resources James (Muir) Project Manager → James Muir (Project Manager) |
| 27 | Plan Risk Management |  |  |  |  |  | resources James (Muir) Project Manager → James Muir (Project Manager) |
| 28 | Identify Risks |  |  |  |  |  | resources James (Muir) Project Manager → James Muir (Project Manager) |
| 29 | Perform Qualitative Risk Analysis |  |  |  |  |  | resources James (Muir) Project Manager → James Muir (Project Manager) |
| 30 | Perform Quantitative Risk Analysis |  |  |  |  |  | resources James (Muir) Project Manager → James Muir (Project Manager) |
| 31 | Plan Risk Responses |  |  |  |  |  | resources James (Muir) Project Manager → James Muir (Project Manager) |
| 35 | Direct and Manage Project Work |  |  |  |  |  | resources James (Muir) Project Manager [85%] → James Muir (Project Manager) [85%] |
| 36 | Manage Project Knowledge |  |  |  |  |  | resources James (Muir) Project Manager [5%] → James Muir (Project Manager) [5%] |
| 39 | Consult with Company Stakeholders |  |  |  |  |  | resources Tamsyn Corey (Lead Designer) [50%] → Tamsyn Corey (Lead Designer) [50%]; Meeting and Catering Costs [0.1%] |
| 50 | **Hardware Design** |  | 2024-02-16 → 2024-01-26 (-21d) | 95d → 80d | 0d → 15d |  |  |
| 75 | **Performance Benchmarking Design** |  | 2024-02-16 → 2024-01-26 (-21d) | 26d → 11d | 0d → 15d |  |  |
| 76 | Obtain Tablet Hardware Components |  | 2024-02-16 → 2024-01-12 (-35d) | 26d → 1d | 0d → 15d |  |  |
| 77 | Develop A14 Bionic Chip Processor Prototype | 2024-01-12 → 2024-01-15 (+3d) | 2024-01-18 → 2024-01-19 (+1d) |  | 16d → 15d | none → 76 |  |
| 78 | Benchmark Processor Prototype | 2024-01-19 → 2024-01-22 (+3d) | 2024-01-25 → 2024-01-26 (+1d) |  | 16d → 15d |  |  |
| 79 | Hardware Design Complete Milestone | 2024-02-16 → 2024-01-26 (-21d) | 2024-02-16 → 2024-01-26 (-21d) |  | 0d → 15d |  |  |
| 100 | **Manufacture Prototype Tablets** |  | 2024-02-28 → 2024-02-26 (-2d) | 8d → 6d |  |  |  |
| 107 | Manufacture 12MP Ultra Wide Camera |  |  |  |  |  | resources Manufacturing Engineer Team [40%] → Manufacturing Engineer Team [40%]; Manufacturing and Production Fees [0.1%] |
| 109 | Assemble Tablets from Components |  |  |  |  | 108 → 100 |  |
| 111 | **Obtain Prototype Quality Assurance Approval** |  |  |  |  | 100 → 109 |  |
| 119 | Monitor and Control Project Work |  |  |  |  |  | resources James (Muir) Project Manager [2%] → James Muir (Project Manager) [2%] |
| 120 | Perform integrated Change Control |  |  |  |  |  | resources James (Muir) Project Manager [1%] → James Muir (Project Manager) [1%] |
| 121 | Monitor Risks |  |  |  |  |  | resources James (Muir) Project Manager [1%] → James Muir (Project Manager) [1%] |
| 122 | Validate Scope |  |  |  |  |  | resources James (Muir) Project Manager [2%] → James Muir (Project Manager) [2%] |
| 123 | Control Scope |  |  |  |  |  | resources James (Muir) Project Manager [1%] → James Muir (Project Manager) [1%] |
| 124 | Control Schedule |  |  |  |  |  | resources James (Muir) Project Manager [2%] → James Muir (Project Manager) [2%] |
| 125 | Control Quality |  |  |  |  |  | resources James (Muir) Project Manager [1%] → James Muir (Project Manager) [1%] |
| 126 | Control Costs |  |  |  |  |  | resources James (Muir) Project Manager [2%] → James Muir (Project Manager) [2%] |
| 127 | Monitor Stakeholder Engagement |  |  |  |  |  | resources James (Muir) Project Manager [1%] → James Muir (Project Manager) [1%] |
| 129 | **Closing Phase** |  |  |  |  |  | was named Closing |
| 130 | Close Project or Phase |  |  |  |  |  | resources Tamsyn Corey (Lead Designer); James (Muir) Project Manager; Meeting and Catering Costs [0.1%] → Tamsyn Corey (Lead Designer); James Muir (Project Manager); Meeting and Catering Costs [0.1%] |

## Version 5 (saved 2023-07-18)

Note of the change: Complete PMP Course

Last finish 2024-03-27 → 2024-03-28 (+1d).

Changed:

| ID | Task | Start | Finish | Duration | Other |
| --- | --- | --- | --- | --- | --- |
| 1 | **Design iPad 10.9 by Eric Hanoun and Kyle Galway** |  | 2024-03-27 → 2024-03-28 (+1d) | 172d → 173d |  |
| 29 | Perform Qualitative Risk Analysis |  |  |  | constraint none → start no earlier than 2023-08-07 |
| 30 | Perform Quantitative Risk Analysis | 2023-09-21 → 2023-09-20 (-1d) |  |  |  |
| 31 | Plan Risk Responses | 2023-09-25 → 2023-09-22 (-3d) |  |  |  |
| 33 | **Executing Phase** | 2023-09-27 → 2023-09-26 (-1d) | 2024-03-20 → 2024-03-21 (+1d) | 126d → 127d |  |
| 34 | **Project Integration Management** | 2023-09-27 → 2023-09-26 (-1d) | 2024-03-20 → 2024-03-21 (+1d) | 126d → 127d |  |
| 35 | Direct and Manage Project Work | 2023-09-27 → 2023-09-26 (-1d) | 2024-03-20 → 2024-03-21 (+1d) | 126d → 127d |  |
| 36 | Manage Project Knowledge | 2023-09-27 → 2023-09-26 (-1d) | 2024-03-20 → 2024-03-21 (+1d) | 126d → 127d |  |
| 42 | **Obtain Approval** |  | 2023-10-06 → 2023-10-09 (+3d) | 4d → 5d |  |
| 43 | Discuss with Company Stakeholders |  | 2023-10-02 → 2023-10-03 (+1d) | 0d → 1d |  |
| 44 | Review by Manufacturing Engineer Team | 2023-10-03 → 2023-10-04 (+1d) | 2023-10-06 → 2023-10-09 (+3d) |  |  |
| 45 | Review by Hardware Development Team | 2023-10-03 → 2023-10-04 (+1d) | 2023-10-06 → 2023-10-09 (+3d) |  |  |
| 46 | Review by Software Development Team | 2023-10-03 → 2023-10-04 (+1d) | 2023-10-06 → 2023-10-09 (+3d) |  |  |
| 47 | Project Approval Obtained Milestone | 2023-10-06 → 2023-10-09 (+3d) | 2023-10-06 → 2023-10-09 (+3d) |  |  |
| 48 | **Design the Tablet** | 2023-10-09 → 2023-10-10 (+1d) | 2024-02-16 → 2024-02-19 (+3d) |  |  |
| 49 | Coordinate Design Teams | 2023-10-09 → 2023-10-10 (+1d) | 2024-02-16 → 2024-02-19 (+3d) |  |  |
| 50 | **Hardware Design** | 2023-10-09 → 2023-10-10 (+1d) | 2024-01-26 → 2024-01-29 (+3d) |  |  |
| 51 | **Design Liquid Retina Display** | 2023-10-09 → 2023-10-10 (+1d) | 2023-10-20 → 2023-10-23 (+3d) |  |  |
| 52 | Design Screen Blueprints | 2023-10-09 → 2023-10-10 (+1d) | 2023-10-13 → 2023-10-16 (+3d) |  |  |
| 53 | Create Screen Prototype | 2023-10-16 → 2023-10-17 (+1d) | 2023-10-18 → 2023-10-19 (+1d) |  |  |
| 54 | Test Screen Prototype | 2023-10-19 → 2023-10-20 (+1d) | 2023-10-20 → 2023-10-23 (+3d) |  |  |
| 55 | **Design 12MP Ultra Wide Camera** | 2023-10-23 → 2023-10-24 (+1d) | 2023-11-07 → 2023-11-08 (+1d) |  |  |
| 56 | Design Camera Blueprints | 2023-10-23 → 2023-10-24 (+1d) | 2023-10-27 → 2023-10-30 (+3d) |  |  |
| 57 | Create Camera Prototype | 2023-10-30 → 2023-10-31 (+1d) | 2023-10-31 → 2023-11-01 (+1d) |  |  |
| 58 | Test Camera Prototype | 2023-11-01 → 2023-11-02 (+1d) | 2023-11-07 → 2023-11-08 (+1d) |  |  |
| 59 | **Design Wifi 6 Adapter** | 2023-11-08 → 2023-11-09 (+1d) | 2023-11-23 → 2023-11-24 (+1d) |  |  |
| 60 | Design Wi-Fi 6 Adapter Blueprints | 2023-11-08 → 2023-11-09 (+1d) | 2023-11-14 → 2023-11-15 (+1d) |  |  |
| 61 | Create Wi-Fi 6 Adapter Prototype | 2023-11-15 → 2023-11-16 (+1d) | 2023-11-16 → 2023-11-17 (+1d) |  |  |
| 62 | Test Wi-Fi 6 Adapter Prototype | 2023-11-17 → 2023-11-20 (+3d) | 2023-11-23 → 2023-11-24 (+1d) |  |  |
| 63 | **Design Touch ID Scanner** | 2023-11-24 → 2023-11-27 (+3d) | 2023-12-08 → 2023-12-11 (+3d) |  |  |
| 64 | Design Touch ID Scanner Blueprints | 2023-11-24 → 2023-11-27 (+3d) | 2023-11-30 → 2023-12-01 (+1d) |  |  |
| 65 | Create Touch ID Scanner Prototype | 2023-12-01 → 2023-12-04 (+3d) | 2023-12-04 → 2023-12-05 (+1d) |  |  |
| 66 | Test Touch ID Scanner Prototype | 2023-12-05 → 2023-12-06 (+1d) | 2023-12-08 → 2023-12-11 (+3d) |  |  |
| 67 | **Design Apple Pencil** | 2023-12-11 → 2023-12-12 (+1d) | 2023-12-26 → 2023-12-27 (+1d) |  |  |
| 68 | Design Apple Pencil Blueprints | 2023-12-11 → 2023-12-12 (+1d) | 2023-12-15 → 2023-12-18 (+3d) |  |  |
| 69 | Create Apple Pencil Prototyps | 2023-12-18 → 2023-12-19 (+1d) | 2023-12-19 → 2023-12-20 (+1d) |  |  |
| 70 | Test Apple Pencil Prototype | 2023-12-20 → 2023-12-21 (+1d) | 2023-12-26 → 2023-12-27 (+1d) |  |  |
| 71 | **Design Magic Keyboard Folio** | 2023-12-27 → 2023-12-28 (+1d) | 2024-01-11 → 2024-01-12 (+1d) |  |  |
| 72 | Design Magic Keyboard Folio and Trackboard Blueprints | 2023-12-27 → 2023-12-28 (+1d) | 2024-01-02 → 2024-01-03 (+1d) |  |  |
| 73 | Create Magic Keyboard Folio and Trackpad Prototype | 2024-01-03 → 2024-01-04 (+1d) | 2024-01-04 → 2024-01-05 (+1d) |  |  |
| 74 | Test Magic Keyboard Folio and Trackpad Prototype | 2024-01-05 → 2024-01-08 (+3d) | 2024-01-11 → 2024-01-12 (+1d) |  |  |
| 75 | **Performance Benchmarking Design** | 2024-01-12 → 2024-01-15 (+3d) | 2024-01-26 → 2024-01-29 (+3d) |  |  |
| 76 | Obtain Tablet Hardware Components | 2024-01-12 → 2024-01-15 (+3d) | 2024-01-12 → 2024-01-15 (+3d) |  |  |
| 77 | Develop A14 Bionic Chip Processor Prototype | 2024-01-15 → 2024-01-16 (+1d) | 2024-01-19 → 2024-01-22 (+3d) |  |  |
| 78 | Benchmark Processor Prototype | 2024-01-22 → 2024-01-23 (+1d) | 2024-01-26 → 2024-01-29 (+3d) |  |  |
| 79 | Hardware Design Complete Milestone | 2024-01-26 → 2024-01-29 (+3d) | 2024-01-26 → 2024-01-29 (+3d) |  |  |
| 80 | **Software Design** | 2023-10-09 → 2023-10-10 (+1d) | 2024-02-16 → 2024-02-19 (+3d) |  |  |
| 81 | **Develop iPadOS** | 2023-10-09 → 2023-10-10 (+1d) | 2023-11-17 → 2023-11-20 (+3d) |  |  |
| 82 | Design UI/UX for Operating System GUI | 2023-10-09 → 2023-10-10 (+1d) | 2023-10-13 → 2023-10-16 (+3d) |  |  |
| 83 | Program OS | 2023-10-16 → 2023-10-17 (+1d) | 2023-11-10 → 2023-11-13 (+3d) |  |  |
| 84 | Optimize OS Performance | 2023-11-13 → 2023-11-14 (+1d) | 2023-11-17 → 2023-11-20 (+3d) |  |  |
| 85 | **Design Canvas APP** | 2023-11-20 → 2023-11-21 (+1d) | 2023-12-15 → 2023-12-18 (+3d) |  |  |
| 86 | Design UI/UX for Canvas | 2023-11-20 → 2023-11-21 (+1d) | 2023-11-24 → 2023-11-27 (+3d) |  |  |
| 87 | Program Canvas App | 2023-11-27 → 2023-11-28 (+1d) | 2023-12-08 → 2023-12-11 (+3d) |  |  |
| 88 | Test Canvas App | 2023-12-11 → 2023-12-12 (+1d) | 2023-12-15 → 2023-12-18 (+3d) |  |  |
| 89 | **Design Augmented Reality Integration Software** | 2023-12-18 → 2023-12-19 (+1d) | 2024-01-26 → 2024-01-29 (+3d) |  |  |
| 90 | Design AR Integration Software Architecture | 2023-12-18 → 2023-12-19 (+1d) | 2023-12-29 → 2024-01-01 (+3d) |  |  |
| 91 | Program AR Integration Software | 2024-01-01 → 2024-01-02 (+1d) | 2024-01-12 → 2024-01-15 (+3d) |  |  |
| 92 | Test AR Integration Software | 2024-01-15 → 2024-01-16 (+1d) | 2024-01-26 → 2024-01-29 (+3d) |  |  |
| 93 | **Design App Store Support** | 2024-01-29 → 2024-01-30 (+1d) | 2024-02-16 → 2024-02-19 (+3d) |  |  |
| 94 | Design App Store Container Architecture | 2024-01-29 → 2024-01-30 (+1d) | 2024-02-02 → 2024-02-05 (+3d) |  |  |
| 95 | Program App Store Container Application | 2024-02-05 → 2024-02-06 (+1d) | 2024-02-09 → 2024-02-12 (+3d) |  |  |
| 96 | Test Compatibility with App Store Web Application | 2024-02-12 → 2024-02-13 (+1d) | 2024-02-16 → 2024-02-19 (+3d) |  |  |
| 97 | Software Design Complete Milestone | 2024-02-16 → 2024-02-19 (+3d) | 2024-02-16 → 2024-02-19 (+3d) |  |  |
| 98 | Tablet Design Complete Milestone | 2024-02-16 → 2024-02-19 (+3d) | 2024-02-16 → 2024-02-19 (+3d) |  |  |
| 99 | **Produce Tablet Prototypes** | 2024-02-19 → 2024-02-20 (+1d) | 2024-02-28 → 2024-02-29 (+1d) |  |  |
| 100 | **Manufacture Prototype Tablets** | 2024-02-19 → 2024-02-20 (+1d) | 2024-02-26 → 2024-02-27 (+1d) |  |  |
| 101 | Meet with Manufacturing Team Lead | 2024-02-19 → 2024-02-20 (+1d) | 2024-02-19 → 2024-02-20 (+1d) |  |  |
| 102 | Manufacture Liquid Retina Display | 2024-02-19 → 2024-02-20 (+1d) | 2024-02-26 → 2024-02-27 (+1d) |  |  |
| 103 | Manufacture Magic Keyboard Folio and Trackpad | 2024-02-19 → 2024-02-20 (+1d) | 2024-02-26 → 2024-02-27 (+1d) |  |  |

| ID | Task | Start | Finish | Duration | Total float | Other |
| --- | --- | --- | --- | --- | --- | --- |
| 104 | Manufacture Wi-fi 6 Adapter | 2024-02-19 → 2024-02-20 (+1d) | 2024-02-26 → 2024-02-27 (+1d) |  |  |  |
| 105 | Manufacture Touch ID Scanner | 2024-02-19 → 2024-02-20 (+1d) | 2024-02-26 → 2024-02-27 (+1d) |  |  |  |
| 106 | Manufacture Apple Pencil | 2024-02-19 → 2024-02-20 (+1d) | 2024-02-26 → 2024-02-27 (+1d) |  |  |  |
| 107 | Manufacture 12MP Ultra Wide Camera | 2024-02-20 → 2024-02-21 (+1d) | 2024-02-26 → 2024-02-27 (+1d) |  |  |  |
| 108 | Parts Manufacturing Complete Milestone | 2024-02-26 → 2024-02-27 (+1d) | 2024-02-26 → 2024-02-27 (+1d) |  |  |  |
| 109 | Assemble Tablets from Components | 2024-02-27 → 2024-02-28 (+1d) | 2024-02-28 → 2024-02-29 (+1d) |  |  |  |
| 110 | Manufacturing Complete Milestone | 2024-02-28 → 2024-02-29 (+1d) | 2024-02-28 → 2024-02-29 (+1d) |  |  |  |
| 111 | **Obtain Prototype Quality Assurance Approval** | 2024-02-29 → 2024-03-01 (+1d) | 2024-03-20 → 2024-03-21 (+1d) |  |  |  |
| 112 | Obtain Hardware Performance Verification | 2024-02-29 → 2024-03-01 (+1d) | 2024-03-06 → 2024-03-07 (+1d) |  |  |  |
| 113 | Obtain Software Performance Verification | 2024-02-29 → 2024-03-01 (+1d) | 2024-03-06 → 2024-03-07 (+1d) |  |  |  |
| 114 | Obtain Regulatory Compliance Verification | 2024-03-07 → 2024-03-08 (+1d) | 2024-03-20 → 2024-03-21 (+1d) |  |  |  |
| 115 | Obtain Test User Approval | 2024-03-07 → 2024-03-08 (+1d) | 2024-03-20 → 2024-03-21 (+1d) |  |  |  |
| 116 | Quality Assurance Verification Obtained Milestone | 2024-03-20 → 2024-03-21 (+1d) | 2024-03-20 → 2024-03-21 (+1d) |  |  |  |
| 117 | Executing Phase Complete Milestone | 2024-03-20 → 2024-03-21 (+1d) | 2024-03-20 → 2024-03-21 (+1d) |  |  |  |
| 118 | **Monitoring and Controlling Phase** | 2023-09-27 → 2023-09-26 (-1d) | 2024-03-20 → 2024-03-21 (+1d) | 126d → 127d |  |  |
| 119 | Monitor and Control Project Work |  | 2024-03-20 → 2024-03-21 (+1d) | 126d → 127d |  | constraint none → start no earlier than 2023-09-26 |
| 120 | Perform integrated Change Control |  | 2024-03-20 → 2024-03-21 (+1d) | 126d → 127d |  |  |
| 121 | Monitor Risks | 2023-09-27 → 2023-09-26 (-1d) |  |  | 121d → 122d |  |
| 122 | Validate Scope | 2023-10-02 → 2023-10-03 (+1d) | 2023-10-06 → 2023-10-09 (+3d) |  |  |  |
| 123 | Control Scope | 2023-09-27 → 2023-09-26 (-1d) |  |  | 118d → 119d |  |
| 124 | Control Schedule | 2023-10-06 → 2023-10-09 (+3d) | 2024-02-16 → 2024-02-19 (+3d) |  |  |  |
| 125 | Control Quality | 2023-10-06 → 2023-10-09 (+3d) | 2024-02-16 → 2024-02-19 (+3d) |  |  |  |
| 126 | Control Costs | 2023-10-09 → 2023-10-10 (+1d) | 2024-03-01 → 2024-03-04 (+3d) |  |  |  |
| 127 | Monitor Stakeholder Engagement | 2023-10-02 → 2023-10-03 (+1d) |  |  | 22d → 23d |  |
| 128 | Monitoring and Controlling Phase Complete Milestone | 2024-03-20 → 2024-03-21 (+1d) | 2024-03-20 → 2024-03-21 (+1d) |  |  |  |
| 129 | **Closing Phase** | 2024-03-20 → 2024-03-21 (+1d) | 2024-03-27 → 2024-03-28 (+1d) |  |  |  |
| 130 | Close Project or Phase | 2024-03-20 → 2024-03-21 (+1d) | 2024-03-27 → 2024-03-28 (+1d) |  |  |  |
| 131 | Project Complete Milestone | 2024-03-27 → 2024-03-28 (+1d) | 2024-03-27 → 2024-03-28 (+1d) |  |  |  |
