# Children's Book Schedule

How a schedule from MS Project changed from version to version. A marks actual dates.

## Version 1 (saved 2018-11-11, file TrackWork.mpp)

Note of the change: Initial commit.

| ID | WBS | Task | Duration | Start | Finish | Predecessors | Complete | Total float | Constraint |
| --- | --- | --- | --- | --- | --- | --- | --- | --- | --- |
| 1 | 1 | **Editorial staff meeting** | 60.12d | 2023-04-17 08:00 A | 2023-07-10 09:00 |  | 15% | 103.75d |  |
| 2 |  | Editorial staff meeting 1 | 1h | 2023-04-17 08:00 A | 2023-04-17 09:00 A |  | 100% |  | start no earlier than 2023-04-17 08:00 |
| 3 |  | Editorial staff meeting 2 | 1h | 2023-04-24 08:00 A | 2023-04-24 09:00 A |  | 100% |  | start no earlier than 2023-04-24 08:00 |
| 4 |  | Editorial staff meeting 3 | 1h | 2023-05-01 08:00 | 2023-05-01 09:00 |  |  | 153.75d | start no earlier than 2023-05-01 08:00 |
| 5 |  | Editorial staff meeting 4 | 1h | 2023-05-08 08:00 | 2023-05-08 09:00 |  |  | 148.75d | start no earlier than 2023-05-08 08:00 |
| 6 |  | Editorial staff meeting 5 | 1h | 2023-05-15 08:00 | 2023-05-15 09:00 |  |  | 143.75d | start no earlier than 2023-05-15 08:00 |
| 7 |  | Editorial staff meeting 6 | 1h | 2023-05-22 08:00 | 2023-05-22 09:00 |  |  | 138.75d | start no earlier than 2023-05-22 08:00 |
| 8 |  | Editorial staff meeting 7 | 1h | 2023-05-29 08:00 | 2023-05-29 09:00 |  |  | 133.75d | start no earlier than 2023-05-29 08:00 |
| 9 |  | Editorial staff meeting 8 | 1h | 2023-06-05 08:00 | 2023-06-05 09:00 |  |  | 128.75d | start no earlier than 2023-06-05 08:00 |
| 10 |  | Editorial staff meeting 9 | 1h | 2023-06-12 08:00 | 2023-06-12 09:00 |  |  | 123.75d | start no earlier than 2023-06-12 08:00 |
| 11 |  | Editorial staff meeting 10 | 1h | 2023-06-19 08:00 | 2023-06-19 09:00 |  |  | 118.75d | start no earlier than 2023-06-19 08:00 |
| 12 |  | Editorial staff meeting 11 | 1h | 2023-06-26 08:00 | 2023-06-26 09:00 |  |  | 113.75d | start no earlier than 2023-06-26 08:00 |
| 13 |  | Editorial staff meeting 12 | 1h | 2023-07-03 08:00 | 2023-07-03 09:00 |  |  | 108.75d | start no earlier than 2023-07-03 08:00 |
| 14 |  | Editorial staff meeting 13 | 1h | 2023-07-10 08:00 | 2023-07-10 09:00 |  |  | 103.75d | start no earlier than 2023-07-10 08:00 |
| 15 | 2 | **Acquisition** | 35.5d | 2023-04-10 08:00 A | 2023-05-29 12:00 |  | 40% | 0d |  |
| 16 |  | Manuscript received | 0d | 2023-04-10 08:00 A | 2023-04-10 08:00 A |  | 100% |  |  |
| 17 |  | Content edit | 15d | 2023-04-10 08:00 A | 2023-05-04 10:00 A | 16 | 100% |  |  |
| 18 |  | Original art review | 10.25d | 2023-04-27 10:00 | 2023-05-11 12:00 | 17FS-5d |  | 0d |  |
| 19 |  | Author review of content edit | 12d | 2023-05-11 13:00 | 2023-05-29 12:00 | 17, 18 |  | 0d |  |
| 20 |  | Handoff to Editorial | 0d | 2023-05-29 12:00 | 2023-05-29 12:00 | 19 |  | 0d |  |
| 21 | 3 | **Editorial** | 29.12d | 2023-05-29 13:00 | 2023-07-07 14:00 | 15 |  | 0d |  |
| 22 |  | Organize manuscript for copyedit | 5.12d | 2023-05-29 13:00 | 2023-06-05 14:00 |  |  | 0d |  |
| 23 |  | Copyedit | 11.25d | 2023-06-05 14:00 | 2023-06-20 16:00 | 22 |  | 0d |  |
| 24 |  | Author review of copyedit | 10d | 2023-06-20 16:00 | 2023-07-04 16:00 | 23 |  | 0d |  |
| 25 |  | Copyedit incorp | 5.12d | 2023-06-30 11:00 | 2023-07-07 14:00 | 24FS-2.5% |  | 0d |  |
| 26 |  | Handoff to Production | 0d | 2023-07-07 14:00 | 2023-07-07 14:00 | 25 |  | 0d |  |
| 27 | 4 | **Design and Production** | 58.25d | 2023-07-07 14:00 | 2023-09-27 16:00 | 21 |  | 0d |  |
| 28 |  | Set pages | 15d | 2023-07-07 14:00 | 2023-07-28 14:00 |  |  | 0d |  |
| 29 |  | Interior illustration design | 15.25d | 2023-07-07 14:00 | 2023-07-28 16:00 | 28SS |  | 0d |  |
| 30 | 4.3 | **1st Pages review** | 30d | 2023-07-28 16:00 | 2023-09-08 16:00 | 29 |  | 0d |  |
| 31 |  | Proofread and index | 10d | 2023-07-28 16:00 | 2023-08-11 16:00 |  |  | 0d | start no earlier than 2023-07-21 08:00 |
| 32 |  | Incorporate 1st Pages review | 10d | 2023-08-11 16:00 | 2023-08-25 16:00 | 31 |  | 0d |  |
| 33 |  | Send proofed pages to Production | 0d | 2023-08-25 16:00 | 2023-08-25 16:00 | 32 |  | 0d |  |
| 34 |  | Enter page corrections and index | 5d | 2023-08-25 16:00 | 2023-09-01 16:00 | 33 |  | 0d |  |
| 35 |  | Cover design | 5d | 2023-09-01 16:00 | 2023-09-08 16:00 | 34 |  | 0d |  |
| 36 | 4.4 | **2nd Pages review** | 13d | 2023-09-08 16:00 | 2023-09-27 16:00 |  |  | 0d |  |
| 37 |  | Proof and review | 6.5d | 2023-09-08 16:00 | 2023-09-19 11:00 | 35 |  | 0d |  |
| 38 |  | Send proofed pages to Production | 0d | 2023-09-19 11:00 | 2023-09-19 11:00 | 37 |  | 0d |  |
| 39 |  | Final review | 5d | 2023-09-20 16:00 | 2023-09-27 16:00 | 38 |  | 0d |  |
| 40 | 4.5 | **Design book's companion website** | 10d | 2023-09-08 16:00 | 2023-09-22 16:00 | 30 |  | 3d |  |
| 41 |  | Create mockup | 4.5d | 2023-09-08 16:00 | 2023-09-20 16:00 |  |  | 3d |  |
| 42 |  | Review with author | 2d | 2023-09-20 16:00 | 2023-09-22 16:00 | 41 |  | 3d |  |
| 43 | 5 | **Color prep and printing** | 46d | 2023-09-27 16:00 | 2023-11-30 16:00 | 40 |  | 0d |  |
| 44 |  | Send to color house | 1d | 2023-09-27 16:00 | 2023-10-02 16:00 | 36 |  | 0d |  |
| 45 |  | Generate proofs | 10d | 2023-10-02 16:00 | 2023-10-16 16:00 | 44 |  | 0d |  |
| 46 |  | Print and ship | 30d | 2023-10-19 16:00 | 2023-11-30 16:00 | 45FS+3d |  | 0d |  |
| 47 | 6 | **Book launch prep** | 22d | 2023-10-02 16:00 | 2023-11-01 16:00 |  |  | 21d |  |
| 48 |  | Launch planning | 5d | 2023-10-02 16:00 | 2023-10-09 16:00 | 44 |  | 21d |  |
| 49 |  | Assign launch team members | 1d | 2023-10-09 16:00 | 2023-10-10 16:00 | 48 |  | 21d |  |
| 50 |  | Complete author questionnaire | 5d | 2023-10-10 16:00 | 2023-10-17 16:00 | 49 |  | 21d |  |
| 51 |  | Schedule author interviews | 1d | 2023-10-17 16:00 | 2023-10-18 16:00 | 50 |  | 21d |  |
| 52 |  | Design and order marketing material | 10d | 2023-10-18 16:00 | 2023-11-01 16:00 | 51 |  | 21d |  |

## Version 2 (saved 2018-11-11, file UpdateBaseline.mpp)

Note of the change: Initial commit.

Last finish stays 2023-11-30. Complete tasks 4 → 0.

Changed:

| ID | Task | Start | Finish | Complete | Total float | Other |
| --- | --- | --- | --- | --- | --- | --- |
| 1 | **Editorial staff meeting** | 2023-04-17 08:00 A → 2023-04-17 08:00 |  | 15% → 0% |  |  |
| 2 | Editorial staff meeting 1 | 2023-04-17 08:00 A → 2023-04-17 08:00 | 2023-04-17 09:00 A → 2023-04-17 09:00 | 100% → 0% | none → 163.75d |  |
| 3 | Editorial staff meeting 2 | 2023-04-24 08:00 A → 2023-04-24 08:00 | 2023-04-24 09:00 A → 2023-04-24 09:00 | 100% → 0% | none → 158.75d |  |
| 15 | **Acquisition** | 2023-04-10 08:00 A → 2023-04-10 08:00 |  | 40% → 0% |  | baseline finish 2023-05-29 12:00 → 2023-05-22 10:00 |
| 16 | Manuscript received | 2023-04-10 08:00 A → 2023-04-10 08:00 | 2023-04-10 08:00 A → 2023-04-10 08:00 | 100% → 0% | none → 0d |  |
| 17 | Content edit | 2023-04-10 08:00 A → 2023-04-10 08:00 | 2023-05-04 10:00 A → 2023-05-04 10:00 | 100% → 0% | none → 0d |  |
| 18 | Original art review |  |  |  |  | baseline start 2023-04-27 10:00 → none; baseline finish 2023-05-11 12:00 → none |
| 19 | Author review of content edit |  |  |  |  | baseline start 2023-05-11 13:00 → 2023-05-04 10:00; baseline finish 2023-05-29 12:00 → 2023-05-22 10:00 |
| 20 | Handoff to Editorial |  |  |  |  | baseline start 2023-05-29 12:00 → 2023-05-22 10:00; baseline finish 2023-05-29 12:00 → 2023-05-22 10:00 |
| 21 | **Editorial** |  |  |  |  | baseline start 2023-05-29 13:00 → 2023-05-22 10:00; baseline finish 2023-07-07 14:00 → 2023-06-30 11:00 |
| 22 | Organize manuscript for copyedit |  |  |  |  | baseline start 2023-05-29 13:00 → 2023-05-22 10:00; baseline finish 2023-06-05 14:00 → 2023-05-29 11:00 |
| 23 | Copyedit |  |  |  |  | baseline start 2023-06-05 14:00 → 2023-05-29 11:00; baseline finish 2023-06-20 16:00 → 2023-06-13 14:00 |
| 24 | Author review of copyedit |  |  |  |  | baseline start 2023-06-20 16:00 → 2023-06-13 14:00; baseline finish 2023-07-04 16:00 → 2023-06-27 14:00 |
| 25 | Copyedit incorp |  |  |  |  | baseline start 2023-06-30 11:00 → 2023-06-23 09:00; baseline finish 2023-07-07 14:00 → 2023-06-30 11:00 |
| 26 | Handoff to Production |  |  |  |  | baseline start 2023-07-07 14:00 → 2023-06-30 11:00; baseline finish 2023-07-07 14:00 → 2023-06-30 11:00 |
| 27 | **Design and Production** |  |  |  |  | baseline start 2023-07-07 14:00 → 2023-06-30 11:00; baseline finish 2023-09-27 16:00 → 2023-09-20 14:00 |
| 28 | Set pages |  |  |  |  | baseline start 2023-07-07 14:00 → 2023-06-30 11:00; baseline finish 2023-07-28 14:00 → 2023-07-21 11:00 |
| 29 | Interior illustration design |  |  |  |  | baseline start 2023-07-07 14:00 → 2023-06-30 11:00; baseline finish 2023-07-28 16:00 → 2023-07-21 14:00 |
| 30 | **1st Pages review** |  |  |  |  | baseline start 2023-07-28 16:00 → 2023-07-21 14:00; baseline finish 2023-09-08 16:00 → 2023-09-01 14:00 |
| 31 | Proofread and index |  |  |  |  | baseline start 2023-07-28 16:00 → 2023-07-21 14:00; baseline finish 2023-08-11 16:00 → 2023-08-04 14:00 |
| 32 | Incorporate 1st Pages review |  |  |  |  | baseline start 2023-08-11 16:00 → 2023-08-04 14:00; baseline finish 2023-08-25 16:00 → 2023-08-18 14:00 |
| 33 | Send proofed pages to Production |  |  |  |  | baseline start 2023-08-25 16:00 → 2023-08-18 14:00; baseline finish 2023-08-25 16:00 → 2023-08-18 14:00 |
| 34 | Enter page corrections and index |  |  |  |  | baseline start 2023-08-25 16:00 → 2023-08-18 14:00; baseline finish 2023-09-01 16:00 → 2023-08-25 14:00 |
| 35 | Cover design |  |  |  |  | baseline start 2023-09-01 16:00 → 2023-08-25 14:00; baseline finish 2023-09-08 16:00 → 2023-09-01 14:00 |
| 36 | **2nd Pages review** |  |  |  |  | baseline start 2023-09-08 16:00 → 2023-09-01 14:00; baseline finish 2023-09-27 16:00 → 2023-09-20 14:00 |
| 37 | Proof and review |  |  |  |  | baseline start 2023-09-08 16:00 → 2023-09-01 14:00; baseline finish 2023-09-19 11:00 → 2023-09-12 09:00 |
| 38 | Send proofed pages to Production |  |  |  |  | baseline start 2023-09-19 11:00 → 2023-09-12 09:00; baseline finish 2023-09-19 11:00 → 2023-09-12 09:00 |
| 39 | Final review |  |  |  |  | baseline start 2023-09-20 16:00 → 2023-09-13 14:00; baseline finish 2023-09-27 16:00 → 2023-09-20 14:00 |
| 40 | **Design book's companion website** |  |  |  |  | baseline start 2023-09-08 16:00 → 2023-09-01 14:00; baseline finish 2023-09-22 16:00 → 2023-09-15 14:00 |
| 41 | Create mockup |  |  |  |  | baseline start 2023-09-08 16:00 → 2023-09-01 14:00; baseline finish 2023-09-20 16:00 → 2023-09-13 14:00 |
| 42 | Review with author |  |  |  |  | baseline start 2023-09-20 16:00 → 2023-09-13 14:00; baseline finish 2023-09-22 16:00 → 2023-09-15 14:00 |
| 43 | **Color prep and printing** |  |  |  |  | baseline start 2023-09-27 16:00 → 2023-09-20 14:00; baseline finish 2023-11-30 16:00 → 2023-11-23 14:00 |
| 44 | Send to color house |  |  |  |  | baseline start 2023-09-27 16:00 → 2023-09-20 14:00; baseline finish 2023-10-02 16:00 → 2023-09-25 14:00 |
| 45 | Generate proofs |  |  |  |  | baseline start 2023-10-02 16:00 → 2023-09-25 14:00; baseline finish 2023-10-16 16:00 → 2023-10-09 14:00 |
| 46 | Print and ship |  |  |  |  | baseline start 2023-10-19 16:00 → 2023-10-12 14:00; baseline finish 2023-11-30 16:00 → 2023-11-23 14:00 |
| 47 | **Book launch prep** |  |  |  |  | baseline start 2023-10-02 16:00 → 2023-09-25 14:00; baseline finish 2023-11-01 16:00 → 2023-10-25 14:00 |
| 48 | Launch planning |  |  |  |  | baseline start 2023-10-02 16:00 → 2023-09-25 14:00; baseline finish 2023-10-09 16:00 → 2023-10-02 14:00 |
| 49 | Assign launch team members |  |  |  |  | baseline start 2023-10-09 16:00 → 2023-10-02 14:00; baseline finish 2023-10-10 16:00 → 2023-10-03 14:00 |
| 50 | Complete author questionnaire |  |  |  |  | baseline start 2023-10-10 16:00 → 2023-10-03 14:00; baseline finish 2023-10-17 16:00 → 2023-10-10 14:00 |
| 51 | Schedule author interviews |  |  |  |  | baseline start 2023-10-17 16:00 → 2023-10-10 14:00; baseline finish 2023-10-18 16:00 → 2023-10-11 14:00 |
| 52 | Design and order marketing material |  |  |  |  | baseline start 2023-10-18 16:00 → 2023-10-11 14:00; baseline finish 2023-11-01 16:00 → 2023-10-25 14:00 |

## Version 3 (saved 2018-11-18, file TrackTimephasedWork.mpp)

Note of the change: Initial commit.

Last finish stays 2023-11-30. Complete tasks 0 → 10.

Changed:

| ID | Task | Start | Finish | Duration | Complete | Total float | Other |
| --- | --- | --- | --- | --- | --- | --- | --- |
| 1 | **Editorial staff meeting** | 2023-04-17 08:00 A |  |  | 0% → 54% | 103.75d → 103.88d | baseline start 2023-04-17 08:00 → 2018-04-16 08:00; baseline finish 2023-07-10 09:00 → 2018-07-09 09:00 |
| 2 | Editorial staff meeting 1 | 2023-04-17 08:00 A | 2023-04-17 09:00 A |  | 0% → 100% | 163.75d → none | baseline start 2023-04-17 08:00 → 2018-04-16 08:00; baseline finish 2023-04-17 09:00 → 2018-04-16 09:00 |
| 3 | Editorial staff meeting 2 | 2023-04-24 08:00 A | 2023-04-24 09:00 A |  | 0% → 100% | 158.75d → none | baseline start 2023-04-24 08:00 → 2018-04-23 08:00; baseline finish 2023-04-24 09:00 → 2018-04-23 09:00 |
| 4 | Editorial staff meeting 3 | 2023-05-01 08:00 A | 2023-05-01 09:00 A |  | 0% → 100% | 153.75d → none | baseline start 2023-05-01 08:00 → 2018-04-30 08:00; baseline finish 2023-05-01 09:00 → 2018-04-30 09:00 |
| 5 | Editorial staff meeting 4 | 2023-05-08 08:00 A | 2023-05-08 09:00 A |  | 0% → 100% | 148.75d → none | baseline start 2023-05-08 08:00 → 2018-05-07 08:00; baseline finish 2023-05-08 09:00 → 2018-05-07 09:00 |
| 6 | Editorial staff meeting 5 | 2023-05-15 08:00 A | 2023-05-15 09:00 A |  | 0% → 100% | 143.75d → none | baseline start 2023-05-15 08:00 → 2018-05-14 08:00; baseline finish 2023-05-15 09:00 → 2018-05-14 09:00 |
| 7 | Editorial staff meeting 6 | 2023-05-22 08:00 A | 2023-05-22 09:00 A |  | 0% → 100% | 138.75d → none | baseline start 2023-05-22 08:00 → 2018-05-21 08:00; baseline finish 2023-05-22 09:00 → 2018-05-21 09:00 |
| 8 | Editorial staff meeting 7 | 2023-05-29 08:00 A | 2023-05-29 09:00 A |  | 0% → 100% | 133.75d → none | baseline start 2023-05-29 08:00 → 2018-05-28 08:00; baseline finish 2023-05-29 09:00 → 2018-05-28 09:00 |
| 9 | Editorial staff meeting 8 | 2023-06-05 08:00 A |  |  | 0% → 2% | 128.75d → 128.88d | baseline start 2023-06-05 08:00 → 2018-06-04 08:00; baseline finish 2023-06-05 09:00 → 2018-06-04 09:00 |
| 10 | Editorial staff meeting 9 |  |  |  |  | 123.75d → 123.88d | baseline start 2023-06-12 08:00 → 2018-06-11 08:00; baseline finish 2023-06-12 09:00 → 2018-06-11 09:00 |
| 11 | Editorial staff meeting 10 |  |  |  |  | 118.75d → 118.88d | baseline start 2023-06-19 08:00 → 2018-06-18 08:00; baseline finish 2023-06-19 09:00 → 2018-06-18 09:00 |
| 12 | Editorial staff meeting 11 |  |  |  |  | 113.75d → 113.88d | baseline start 2023-06-26 08:00 → 2018-06-25 08:00; baseline finish 2023-06-26 09:00 → 2018-06-25 09:00 |
| 13 | Editorial staff meeting 12 |  |  |  |  | 108.75d → 108.88d | baseline start 2023-07-03 08:00 → 2018-07-02 08:00; baseline finish 2023-07-03 09:00 → 2018-07-02 09:00 |
| 14 | Editorial staff meeting 13 |  |  |  |  | 103.75d → 103.88d | baseline start 2023-07-10 08:00 → 2018-07-09 08:00; baseline finish 2023-07-10 09:00 → 2018-07-09 09:00 |
| 15 | **Acquisition** | 2023-04-10 08:00 A | 2023-05-29 12:00 → 2023-05-30 17:00 (+1d) | 35.5d → 37d | 0% → 99% | 0d → 2d | baseline start 2023-04-10 08:00 → 2018-04-09 08:00; baseline finish 2023-05-22 10:00 → 2018-05-28 12:00 |
| 16 | Manuscript received |  |  |  |  | 0d → 18.25d | baseline start 2023-04-10 08:00 → 2018-04-09 08:00; baseline finish 2023-04-10 08:00 → 2018-04-09 08:00 |
| 17 | Content edit | 2023-04-10 08:00 A | 2023-05-04 10:00 A |  | 0% → 100% | 0d → none | baseline start 2023-04-10 08:00 → 2018-04-09 08:00; baseline finish 2023-05-04 10:00 → 2018-05-03 10:00 |
| 18 | Original art review | 2023-04-27 10:00 A | 2023-05-11 12:00 A |  | 0% → 100% | 0d → none | baseline start none → 2018-04-26 10:00; baseline finish none → 2018-05-10 12:00 |
| 19 | Author review of content edit | 2023-05-11 13:00 A | 2023-05-29 12:00 → 2023-05-30 17:00 A (+1d) | 12d → 13.5d | 0% → 100% | 0d → none | baseline start 2023-05-04 10:00 → 2018-05-10 13:00; baseline finish 2023-05-22 10:00 → 2018-05-28 12:00 |
| 20 | Handoff to Editorial | 2023-05-29 12:00 → 2023-05-30 17:00 (+1d) | 2023-05-29 12:00 → 2023-05-30 17:00 (+1d) |  |  | 0d → 2d | baseline start 2023-05-22 10:00 → 2018-05-28 12:00; baseline finish 2023-05-22 10:00 → 2018-05-28 12:00 |
| 21 | **Editorial** | 2023-05-29 13:00 → 2023-05-31 08:00 (+2d) | 2023-07-07 14:00 → 2023-07-11 10:00 (+4d) | 29.12d → 29.25d |  | 0d → 2d | baseline start 2023-05-22 10:00 → 2018-05-28 13:00; baseline finish 2023-06-30 11:00 → 2018-07-06 14:00 |
| 22 | Organize manuscript for copyedit | 2023-05-29 13:00 → 2023-05-31 08:00 (+2d) | 2023-06-05 14:00 → 2023-06-06 17:00 (+1d) | 5.12d → 5d |  | 0d → 2d | baseline start 2023-05-22 10:00 → 2018-05-28 13:00; baseline finish 2023-05-29 11:00 → 2018-06-04 14:00 |
| 23 | Copyedit | 2023-06-05 14:00 → 2023-06-07 08:00 (+2d) | 2023-06-20 16:00 → 2023-06-22 12:00 (+2d) | 11.25d → 11.5d |  | 0d → 2d | baseline start 2023-05-29 11:00 → 2018-06-04 14:00; baseline finish 2023-06-13 14:00 → 2018-06-19 16:00 |
| 24 | Author review of copyedit | 2023-06-20 16:00 → 2023-06-22 13:00 (+2d) | 2023-07-04 16:00 → 2023-07-06 12:00 (+2d) |  |  | 0d → 2d | baseline start 2023-06-13 14:00 → 2018-06-19 16:00; baseline finish 2023-06-27 14:00 → 2018-07-03 16:00 |
| 25 | Copyedit incorp | 2023-06-30 11:00 → 2023-07-04 08:00 (+4d) | 2023-07-07 14:00 → 2023-07-11 10:00 (+4d) |  |  | 0d → 2d | baseline start 2023-06-23 09:00 → 2018-06-29 11:00; baseline finish 2023-06-30 11:00 → 2018-07-06 14:00 |
| 26 | Handoff to Production | 2023-07-07 14:00 → 2023-07-11 10:00 (+4d) | 2023-07-07 14:00 → 2023-07-11 10:00 (+4d) |  |  | 0d → 2d | baseline start 2023-06-30 11:00 → 2018-07-06 14:00; baseline finish 2023-06-30 11:00 → 2018-07-06 14:00 |
| 27 | **Design and Production** | 2023-07-07 14:00 → 2023-07-11 10:00 (+4d) | 2023-09-27 16:00 → 2023-09-29 12:00 (+2d) |  |  | 0d → 0.5d | baseline start 2023-06-30 11:00 → 2018-07-06 14:00; baseline finish 2023-09-20 14:00 → 2018-09-26 16:00 |
| 28 | Set pages | 2023-07-07 14:00 → 2023-07-11 10:00 (+4d) | 2023-07-28 14:00 → 2023-08-01 10:00 (+4d) |  |  | 0d → 2d | baseline start 2023-06-30 11:00 → 2018-07-06 14:00; baseline finish 2023-07-21 11:00 → 2018-07-27 14:00 |
| 29 | Interior illustration design | 2023-07-07 14:00 → 2023-07-11 10:00 (+4d) | 2023-07-28 16:00 → 2023-08-01 12:00 (+4d) |  |  | 0d → 2d | baseline start 2023-06-30 11:00 → 2018-07-06 14:00; baseline finish 2023-07-21 14:00 → 2018-07-27 16:00 |
| 30 | **1st Pages review** | 2023-07-28 16:00 → 2023-08-01 13:00 (+4d) | 2023-09-08 16:00 → 2023-09-12 12:00 (+4d) |  |  | 0d → 2d | baseline start 2023-07-21 14:00 → 2018-07-27 16:00; baseline finish 2023-09-01 14:00 → 2018-09-07 16:00 |
| 31 | Proofread and index | 2023-07-28 16:00 → 2023-08-01 13:00 (+4d) | 2023-08-11 16:00 → 2023-08-15 12:00 (+4d) |  |  | 0d → 2d | baseline start 2023-07-21 14:00 → 2018-07-27 16:00; baseline finish 2023-08-04 14:00 → 2018-08-10 16:00 |
| 32 | Incorporate 1st Pages review | 2023-08-11 16:00 → 2023-08-15 13:00 (+4d) | 2023-08-25 16:00 → 2023-08-29 12:00 (+4d) |  |  | 0d → 2d | baseline start 2023-08-04 14:00 → 2018-08-10 16:00; baseline finish 2023-08-18 14:00 → 2018-08-24 16:00 |
| 33 | Send proofed pages to Production | 2023-08-25 16:00 → 2023-08-29 12:00 (+4d) | 2023-08-25 16:00 → 2023-08-29 12:00 (+4d) |  |  | 0d → 2d | baseline start 2023-08-18 14:00 → 2018-08-24 16:00; baseline finish 2023-08-18 14:00 → 2018-08-24 16:00 |
| 34 | Enter page corrections and index | 2023-08-25 16:00 → 2023-08-29 13:00 (+4d) | 2023-09-01 16:00 → 2023-09-05 12:00 (+4d) |  |  | 0d → 2d | baseline start 2023-08-18 14:00 → 2018-08-24 16:00; baseline finish 2023-08-25 14:00 → 2018-08-31 16:00 |
| 35 | Cover design | 2023-09-01 16:00 → 2023-09-05 13:00 (+4d) | 2023-09-08 16:00 → 2023-09-12 12:00 (+4d) |  |  | 0d → 2d | baseline start 2023-08-25 14:00 → 2018-08-31 16:00; baseline finish 2023-09-01 14:00 → 2018-09-07 16:00 |
| 36 | **2nd Pages review** | 2023-09-08 16:00 → 2023-09-12 13:00 (+4d) | 2023-09-27 16:00 → 2023-09-29 12:00 (+2d) |  |  | 0d → 0.5d | baseline start 2023-09-01 14:00 → 2018-09-07 16:00; baseline finish 2023-09-20 14:00 → 2018-09-26 16:00 |
| 37 | Proof and review | 2023-09-08 16:00 → 2023-09-12 13:00 (+4d) | 2023-09-19 11:00 → 2023-09-20 17:00 (+1d) |  |  | 0d → 2d | baseline start 2023-09-01 14:00 → 2018-09-07 16:00; baseline finish 2023-09-12 09:00 → 2018-09-18 11:00 |
| 38 | Send proofed pages to Production | 2023-09-19 11:00 → 2023-09-20 17:00 (+1d) | 2023-09-19 11:00 → 2023-09-20 17:00 (+1d) |  |  | 0d → 2d | baseline start 2023-09-12 09:00 → 2018-09-18 11:00; baseline finish 2023-09-12 09:00 → 2018-09-18 11:00 |
| 39 | Final review | 2023-09-20 16:00 → 2023-09-22 13:00 (+2d) | 2023-09-27 16:00 → 2023-09-29 12:00 (+2d) |  |  | 0d → 0.5d | baseline start 2023-09-13 14:00 → 2018-09-19 16:00; baseline finish 2023-09-20 14:00 → 2018-09-26 16:00 |
| 40 | **Design book's companion website** | 2023-09-08 16:00 → 2023-09-12 13:00 (+4d) | 2023-09-22 16:00 → 2023-09-26 12:00 (+4d) |  |  | 3d → 3.5d | baseline start 2023-09-01 14:00 → 2018-09-07 16:00; baseline finish 2023-09-15 14:00 → 2018-09-21 16:00 |
| 41 | Create mockup | 2023-09-08 16:00 → 2023-09-12 13:00 (+4d) | 2023-09-20 16:00 → 2023-09-22 12:00 (+2d) |  |  | 3d → 3.5d | baseline start 2023-09-01 14:00 → 2018-09-07 16:00; baseline finish 2023-09-13 14:00 → 2018-09-19 16:00 |
| 42 | Review with author | 2023-09-20 16:00 → 2023-09-22 13:00 (+2d) | 2023-09-22 16:00 → 2023-09-26 12:00 (+4d) |  |  | 3d → 3.5d | baseline start 2023-09-13 14:00 → 2018-09-19 16:00; baseline finish 2023-09-15 14:00 → 2018-09-21 16:00 |
| 43 | **Color prep and printing** | 2023-09-27 16:00 → 2023-10-02 08:00 (+5d) | 2023-11-30 16:00 → 2023-11-30 17:00 | 46d → 44d |  |  | baseline start 2023-09-20 14:00 → 2018-09-26 16:00; baseline finish 2023-11-23 14:00 → 2018-11-29 16:00 |
| 44 | Send to color house | 2023-09-27 16:00 → 2023-10-02 08:00 (+5d) | 2023-10-02 16:00 → 2023-10-02 17:00 |  |  |  | baseline start 2023-09-20 14:00 → 2018-09-26 16:00; baseline finish 2023-09-25 14:00 → 2018-10-01 16:00 |
| 45 | Generate proofs | 2023-10-02 16:00 → 2023-10-03 08:00 (+1d) | 2023-10-16 16:00 → 2023-10-16 17:00 |  |  |  | baseline start 2023-09-25 14:00 → 2018-10-01 16:00; baseline finish 2023-10-09 14:00 → 2018-10-15 16:00 |
| 46 | Print and ship | 2023-10-19 16:00 → 2023-10-20 08:00 (+1d) | 2023-11-30 16:00 → 2023-11-30 17:00 |  |  |  | baseline start 2023-10-12 14:00 → 2018-10-18 16:00; baseline finish 2023-11-23 14:00 → 2018-11-29 16:00 |
| 47 | **Book launch prep** | 2023-10-02 16:00 → 2023-10-03 08:00 (+1d) | 2023-11-01 16:00 → 2023-11-01 17:00 |  |  |  | baseline start 2023-09-25 14:00 → 2018-10-01 16:00; baseline finish 2023-10-25 14:00 → 2018-10-31 16:00 |
| 48 | Launch planning | 2023-10-02 16:00 → 2023-10-03 08:00 (+1d) | 2023-10-09 16:00 → 2023-10-09 17:00 |  |  |  | baseline start 2023-09-25 14:00 → 2018-10-01 16:00; baseline finish 2023-10-02 14:00 → 2018-10-08 16:00 |
| 49 | Assign launch team members | 2023-10-09 16:00 → 2023-10-10 08:00 (+1d) | 2023-10-10 16:00 → 2023-10-10 17:00 |  |  |  | baseline start 2023-10-02 14:00 → 2018-10-08 16:00; baseline finish 2023-10-03 14:00 → 2018-10-09 16:00 |
| 50 | Complete author questionnaire | 2023-10-10 16:00 → 2023-10-11 08:00 (+1d) | 2023-10-17 16:00 → 2023-10-17 17:00 |  |  |  | baseline start 2023-10-03 14:00 → 2018-10-09 16:00; baseline finish 2023-10-10 14:00 → 2018-10-16 16:00 |
| 51 | Schedule author interviews | 2023-10-17 16:00 → 2023-10-18 08:00 (+1d) | 2023-10-18 16:00 → 2023-10-18 17:00 |  |  |  | baseline start 2023-10-10 14:00 → 2018-10-16 16:00; baseline finish 2023-10-11 14:00 → 2018-10-17 16:00 |
| 52 | Design and order marketing material | 2023-10-18 16:00 → 2023-10-19 08:00 (+1d) | 2023-11-01 16:00 → 2023-11-01 17:00 |  |  |  | baseline start 2023-10-11 14:00 → 2018-10-17 16:00; baseline finish 2023-10-25 14:00 → 2018-10-31 16:00 |
